# Hutgraaf fase 2 29 woningen 23-03-2016

Schedule from MS Project XML, 2016-05-02 to 2017-03-07.

## Calendars

- Prognosekalender verlof / rv / vv: Mon-Fri 08:00-16:00; Sat-Sun off. Exceptions (off unless hours are given): 2016-05-05 to 2016-05-06, 2016-05-16, 2016-06-01, 2016-08-01 to 2016-08-05, 2016-08-08 to 2016-08-12, 2016-08-15 to 2016-08-19, 2016-09-07, 2016-10-05, 2016-11-02, 2016-12-07, 2016-12-14, 2016-12-21, 2016-12-26 to 2016-12-30, 2017-01-02 to 2017-01-06, 2017-01-11, 2017-01-18 to 2017-01-19, 2017-01-25 to 2017-01-26, 2017-02-01 to 2017-02-02, 2017-02-08 to 2017-02-09, 2017-02-13 to 2017-02-16, 2017-02-22, 2017-03-01.

## Schedule

| ID | WBS | Task | Duration | Start | Finish | Predecessors | Constraint | Unique_Task_ID | CodeLibrary:"Legenda" |
| --- | --- | --- | --- | --- | --- | --- | --- | --- | --- |
| 1 | 2440 | **UITVOERINGSTIJDSCHEMA** | 1376h | 2016-05-02 | 2017-03-07 |  | start no earlier than 2016-05-02 | 10 | "3 UITVOERINGSTIJDSCHEMA-FASERING" |
| 4 | 2440.4267 | **BOUWRIJP MAKEN FASE 2** | 136h | 2016-05-02 | 2016-05-27 |  | start no earlier than 2016-05-02 | 34795 | "3 UITVOERINGSTIJDSCHEMA-BLOKKEN.Blok 12 C12 tm C15" |
| 5 | 2440.4267.4305 | NUTS trace aanleggen | 17d | 2016-05-02 | 2016-05-27 |  | start no earlier than 2016-05-02 | 34815 | "3 UITVOERINGSTIJDSCHEMA-BLOKKEN.Blok 12 C12 tm C15" |
| 6 | 2440.4267.5269 | tijdelijke NUTS aansluitingen | 5d | 2016-05-23 | 2016-05-27 |  | start no earlier than 2016-05-23 | 34345 | "algemeen" |
| 8 | 2440.4266 | **BOUWTIJD** | 1240h | 2016-05-30 | 2017-03-07 |  | start no earlier than 2016-05-30 | 34216 | "3 UITVOERINGSTIJDSCHEMA-BLOKKEN.Blok 12 C12 tm C15" |
| 9 | 2440.4266.4274 | **BOUWPLAATSINRICHTING** | 40h | 2016-05-30 | 2016-06-06 |  | start no earlier than 2016-05-30 | 34335 | "3 UITVOERINGSTIJDSCHEMA-BLOKKEN.Blok 12 C12 tm C15" |
| 10 | 2440.4266.4274.4306 | inrichting bouwterrein | 5d | 2016-05-30 | 2016-06-06 | 5 |  | 331 | "algemeen" |
| 12 | 2440.4266.4275 | **ONDERBOUW** | 360h | 2016-06-07 | 2016-08-29 |  | start no earlier than 2016-06-07 | 363 | "3 UITVOERINGSTIJDSCHEMA-BLOKKEN.Blok 10 C01 tm C07" |
| 13 | 2440.4266.4275.4307 | Uitzetten t.b.v. grondwerk | 3d | 2016-06-07 | 2016-06-09 | 10 |  | 29675 | "3 UITVOERINGSTIJDSCHEMA-FASERING.3.7 algemeen" |
| 14 | 2440.4266.4275.4308 | Grondwerk | 4d | 2016-06-10 | 2016-06-15 | 13 |  | 45875 | "algemeen" |
| 15 | 2440.4266.4275.4309 | Aanbrengen boorpalen | 8d | 2016-06-16 | 2016-06-27 | 14 |  | 45865 | "algemeen" |
| 16 | 2440.4266.4275.4310 | Nuts invoeren (onder fundering) | 1d | 2016-07-01 | 2016-07-01 | 15FS+5d |  | 27905 | "3 UITVOERINGSTIJDSCHEMA-BLOKKEN.Blok 10 C01 tm C07" |
| 17 | 2440.4266.4275.4311 | Nuts invoeren (onder fundering) | 1d | 2016-07-06 | 2016-07-06 | 16 |  | 35165 | "3 UITVOERINGSTIJDSCHEMA-BLOKKEN.Blok 11 C08 tm C11" |
| 18 | 2440.4266.4275.4312 | Nuts invoeren (onder fundering) | 1d | 2016-07-08 | 2016-07-08 | 17 |  | 35175 | "3 UITVOERINGSTIJDSCHEMA-BLOKKEN.Blok 12 C12 tm C15" |
| 19 | 2440.4266.4275.4316 | Nuts invoeren (onder fundering) | 1d | 2016-07-12 | 2016-07-12 | 18 |  | 35215 | "3 UITVOERINGSTIJDSCHEMA-BLOKKEN.Blok 13 C16 en C17" |
| 20 | 2440.4266.4275.4317 | Nuts invoeren (onder fundering) | 1d | 2016-07-13 | 2016-07-13 | 19 |  | 35225 | "3 UITVOERINGSTIJDSCHEMA-BLOKKEN.Blok 14 C18 en C19" |
| 21 | 2440.4266.4275.4318 | Nuts invoeren (onder fundering) | 1d | 2016-07-14 | 2016-07-14 | 20 |  | 35235 | "3 UITVOERINGSTIJDSCHEMA-BLOKKEN.Blok 15 C20 en C21" |
| 22 | 2440.4266.4275.4766 | Nuts invoeren (onder fundering) | 1d | 2016-07-15 | 2016-07-15 | 21 |  | 50075 | "3 UITVOERINGSTIJDSCHEMA-BLOKKEN.Blok 16 C22 tm C29" |
| 23 | 2440.4266.4275.4319 | maatvoering + Stellen funderingkist | 3d | 2016-07-04 | 2016-07-06 |  | start no earlier than 2016-07-04 | 35245 | "3 UITVOERINGSTIJDSCHEMA-BLOKKEN.Blok 10 C01 tm C07" |
| 24 | 2440.4266.4275.4320 | maatvoering + Stellen funderingkist | 2d | 2016-07-07 | 2016-07-08 | 23 |  | 35255 | "3 UITVOERINGSTIJDSCHEMA-BLOKKEN.Blok 11 C08 tm C11" |
| 25 | 2440.4266.4275.4321 | maatvoering + Stellen funderingkist | 2d | 2016-07-11 | 2016-07-12 | 24 |  | 35265 | "3 UITVOERINGSTIJDSCHEMA-BLOKKEN.Blok 12 C12 tm C15" |
| 26 | 2440.4266.4275.4325 | maatvoering + Stellen funderingkist | 1d | 2016-07-13 | 2016-07-13 | 25 |  | 35305 | "3 UITVOERINGSTIJDSCHEMA-BLOKKEN.Blok 13 C16 en C17" |
| 27 | 2440.4266.4275.4326 | maatvoering + Stellen funderingkist | 1d | 2016-07-14 | 2016-07-14 | 26 |  | 35315 | "3 UITVOERINGSTIJDSCHEMA-BLOKKEN.Blok 14 C18 en C19" |
| 28 | 2440.4266.4275.4327 | maatvoering + Stellen funderingkist | 1d | 2016-07-15 | 2016-07-15 | 27 |  | 35325 | "3 UITVOERINGSTIJDSCHEMA-BLOKKEN.Blok 15 C20 en C21" |
| 29 | 2440.4266.4275.4774 | maatvoering + Stellen funderingkist | 3d | 2016-07-18 | 2016-07-20 | 28 |  | 50085 | "3 UITVOERINGSTIJDSCHEMA-BLOKKEN.Blok 16 C22 tm C29" |
| 30 | 2440.4266.4275.4328 | Stort | 1d | 2016-07-07 | 2016-07-07 |  | start no earlier than 2016-07-07 | 373 | "3 UITVOERINGSTIJDSCHEMA-BLOKKEN.Blok 10 C01 tm C07" |
| 31 | 2440.4266.4275.4329 | Stort | 1d | 2016-07-11 | 2016-07-11 | 30 |  | 35335 | "3 UITVOERINGSTIJDSCHEMA-BLOKKEN.Blok 11 C08 tm C11" |
| 32 | 2440.4266.4275.4330 | Stort | 1d | 2016-07-13 | 2016-07-13 | 31 |  | 35345 | "3 UITVOERINGSTIJDSCHEMA-BLOKKEN.Blok 12 C12 tm C15" |
| 33 | 2440.4266.4275.4334 | Stort | 1d | 2016-07-14 | 2016-07-14 | 32 |  | 35385 | "3 UITVOERINGSTIJDSCHEMA-BLOKKEN.Blok 13 C16 en C17" |
| 34 | 2440.4266.4275.4335 | Stort | 1d | 2016-07-15 | 2016-07-15 | 33 |  | 35395 | "3 UITVOERINGSTIJDSCHEMA-BLOKKEN.Blok 14 C18 en C19" |
| 35 | 2440.4266.4275.4336 | Stort | 1d | 2016-07-18 | 2016-07-18 | 34 |  | 35405 | "3 UITVOERINGSTIJDSCHEMA-BLOKKEN.Blok 15 C20 en C21" |
| 36 | 2440.4266.4275.4783 | Stort | 1d | 2016-07-21 | 2016-07-21 | 35 |  | 50105 | "3 UITVOERINGSTIJDSCHEMA-BLOKKEN.Blok 16 C22 tm C29" |
| 37 | 2440.4266.4275.4337 | Installaties onder peil | 3d | 2016-07-08 | 2016-07-12 |  | start no earlier than 2016-07-08 | 35415 | "3 UITVOERINGSTIJDSCHEMA-BLOKKEN.Blok 10 C01 tm C07" |
| 38 | 2440.4266.4275.4338 | Installaties onder peil | 2d | 2016-07-13 | 2016-07-14 | 37 |  | 35425 | "3 UITVOERINGSTIJDSCHEMA-BLOKKEN.Blok 11 C08 tm C11" |
| 39 | 2440.4266.4275.4339 | Installaties onder peil | 2d | 2016-07-15 | 2016-07-18 | 38 |  | 35435 | "3 UITVOERINGSTIJDSCHEMA-BLOKKEN.Blok 12 C12 tm C15" |
| 40 | 2440.4266.4275.4343 | Installaties onder peil | 1d | 2016-07-19 | 2016-07-19 | 39 |  | 35475 | "3 UITVOERINGSTIJDSCHEMA-BLOKKEN.Blok 13 C16 en C17" |
| 41 | 2440.4266.4275.4344 | Installaties onder peil | 1d | 2016-07-20 | 2016-07-20 | 40 |  | 35485 | "3 UITVOERINGSTIJDSCHEMA-BLOKKEN.Blok 14 C18 en C19" |
| 42 | 2440.4266.4275.4345 | Installaties onder peil | 1d | 2016-07-21 | 2016-07-21 | 41 |  | 35495 | "3 UITVOERINGSTIJDSCHEMA-BLOKKEN.Blok 15 C20 en C21" |
| 43 | 2440.4266.4275.4775 | Installaties onder peil | 3d | 2016-07-22 | 2016-07-26 | 42 |  | 50095 | "3 UITVOERINGSTIJDSCHEMA-BLOKKEN.Blok 16 C22 tm C29" |
| 44 | 2440.4266.4275.4346 | Ribcassettevloer leggen | 2d | 2016-07-13 | 2016-07-14 |  | start no earlier than 2016-07-13 | 30705 | "3 UITVOERINGSTIJDSCHEMA-BLOKKEN.Blok 10 C01 tm C07" |
| 45 | 2440.4266.4275.4347 | Ribcassettevloer leggen | 1d | 2016-07-15 | 2016-07-15 | 44 |  | 35505 | "3 UITVOERINGSTIJDSCHEMA-BLOKKEN.Blok 11 C08 tm C11" |
| 46 | 2440.4266.4275.4348 | Ribcassettevloer leggen | 1d | 2016-07-19 | 2016-07-19 | 45 |  | 35515 | "3 UITVOERINGSTIJDSCHEMA-BLOKKEN.Blok 12 C12 tm C15" |
| 47 | 2440.4266.4275.4352 | Ribcassettevloer leggen | 1d | 2016-07-20 | 2016-07-20 | 46 |  | 35555 | "3 UITVOERINGSTIJDSCHEMA-BLOKKEN.Blok 13 C16 en C17" |
| 48 | 2440.4266.4275.4353 | Ribcassettevloer leggen | 1d | 2016-07-21 | 2016-07-21 | 47 |  | 35565 | "3 UITVOERINGSTIJDSCHEMA-BLOKKEN.Blok 14 C18 en C19" |
| 49 | 2440.4266.4275.4354 | Ribcassettevloer leggen | 1d | 2016-07-25 | 2016-07-25 | 48 |  | 35575 | "3 UITVOERINGSTIJDSCHEMA-BLOKKEN.Blok 15 C20 en C21" |
| 50 | 2440.4266.4275.4784 | Ribcassettevloer leggen | 2d | 2016-07-27 | 2016-07-28 | 49 |  | 50115 | "3 UITVOERINGSTIJDSCHEMA-BLOKKEN.Blok 16 C22 tm C29" |
| 51 | 2440.4266.4275.4355 | Stortklaar maken en afstorten | 2d | 2016-07-15 | 2016-07-18 |  | start no earlier than 2016-07-15 | 35595 | "3 UITVOERINGSTIJDSCHEMA-BLOKKEN.Blok 10 C01 tm C07" |
| 52 | 2440.4266.4275.4356 | Stortklaar maken en afstorten | 1d | 2016-07-19 | 2016-07-19 | 51 |  | 35605 | "3 UITVOERINGSTIJDSCHEMA-BLOKKEN.Blok 11 C08 tm C11" |
| 53 | 2440.4266.4275.4357 | Stortklaar maken en afstorten | 1d | 2016-07-20 | 2016-07-20 | 52 |  | 35615 | "3 UITVOERINGSTIJDSCHEMA-BLOKKEN.Blok 12 C12 tm C15" |
| 54 | 2440.4266.4275.4361 | Stortklaar maken en afstorten | 1d | 2016-07-21 | 2016-07-21 | 53 |  | 35655 | "3 UITVOERINGSTIJDSCHEMA-BLOKKEN.Blok 13 C16 en C17" |
| 55 | 2440.4266.4275.4362 | Stortklaar maken en afstorten | 1d | 2016-07-22 | 2016-07-22 | 54 |  | 35665 | "3 UITVOERINGSTIJDSCHEMA-BLOKKEN.Blok 14 C18 en C19" |
| 56 | 2440.4266.4275.4363 | Stortklaar maken en afstorten | 1d | 2016-07-26 | 2016-07-26 | 55 |  | 35675 | "3 UITVOERINGSTIJDSCHEMA-BLOKKEN.Blok 15 C20 en C21" |
| 57 | 2440.4266.4275.4792 | Stortklaar maken en afstorten | 2d | 2016-07-28 | 2016-07-29 | 56 |  | 50125 | "3 UITVOERINGSTIJDSCHEMA-BLOKKEN.Blok 16 C22 tm C29" |
| 58 | 2440.4266.4275.4364 | Metselwerk onder peil (buitenblad) | 3d | 2016-07-19 | 2016-07-21 |  | start no earlier than 2016-07-19 | 45885 | "3 UITVOERINGSTIJDSCHEMA-BLOKKEN.Blok 10 C01 tm C07" |
| 59 | 2440.4266.4275.4365 | Metselwerk onder peil (buitenblad) | 2d | 2016-07-22 | 2016-07-25 | 58 |  | 45895 | "3 UITVOERINGSTIJDSCHEMA-BLOKKEN.Blok 11 C08 tm C11" |
| 60 | 2440.4266.4275.4366 | Metselwerk onder peil (buitenblad) | 2d | 2016-07-26 | 2016-07-27 | 59 |  | 45905 | "3 UITVOERINGSTIJDSCHEMA-BLOKKEN.Blok 12 C12 tm C15" |
| 61 | 2440.4266.4275.4370 | Metselwerk onder peil (buitenblad) | 1d | 2016-07-28 | 2016-07-28 | 60 |  | 45945 | "3 UITVOERINGSTIJDSCHEMA-BLOKKEN.Blok 13 C16 en C17" |
| 62 | 2440.4266.4275.4371 | Metselwerk onder peil (buitenblad) | 1d | 2016-07-29 | 2016-07-29 | 61 |  | 45955 | "3 UITVOERINGSTIJDSCHEMA-BLOKKEN.Blok 14 C18 en C19" |
| 63 | 2440.4266.4275.4372 | Metselwerk onder peil (buitenblad) | 1d | 2016-08-22 | 2016-08-22 | 62 |  | 45965 | "3 UITVOERINGSTIJDSCHEMA-BLOKKEN.Blok 15 C20 en C21" |
| 64 | 2440.4266.4275.4793 | Metselwerk onder peil (buitenblad) | 3d | 2016-08-23 | 2016-08-25 | 63 |  | 50135 | "3 UITVOERINGSTIJDSCHEMA-BLOKKEN.Blok 16 C22 tm C29" |
| 65 | 2440.4266.4275.4373 | Aanvullen grondwerk rondom | 3d | 2016-07-21 | 2016-07-25 |  | start no earlier than 2016-07-21 | 46155 | "3 UITVOERINGSTIJDSCHEMA-BLOKKEN.Blok 10 C01 tm C07" |
| 66 | 2440.4266.4275.4374 | Aanvullen grondwerk rondom | 2d | 2016-07-26 | 2016-07-27 | 65 |  | 46165 | "3 UITVOERINGSTIJDSCHEMA-BLOKKEN.Blok 11 C08 tm C11" |
| 67 | 2440.4266.4275.4375 | Aanvullen grondwerk rondom | 2d | 2016-07-28 | 2016-07-29 | 66 |  | 46175 | "3 UITVOERINGSTIJDSCHEMA-BLOKKEN.Blok 12 C12 tm C15" |
| 68 | 2440.4266.4275.4379 | Aanvullen grondwerk rondom | 1d | 2016-08-22 | 2016-08-22 | 67 |  | 46215 | "3 UITVOERINGSTIJDSCHEMA-BLOKKEN.Blok 13 C16 en C17" |
| 69 | 2440.4266.4275.4380 | Aanvullen grondwerk rondom | 1d | 2016-08-23 | 2016-08-23 | 68 |  | 46225 | "3 UITVOERINGSTIJDSCHEMA-BLOKKEN.Blok 14 C18 en C19" |
| 70 | 2440.4266.4275.4381 | Aanvullen grondwerk rondom | 1d | 2016-08-24 | 2016-08-24 | 69 |  | 46235 | "3 UITVOERINGSTIJDSCHEMA-BLOKKEN.Blok 15 C20 en C21" |
| 71 | 2440.4266.4275.4802 | Aanvullen grondwerk rondom | 2d | 2016-08-25 | 2016-08-26 | 70 |  | 50145 | "3 UITVOERINGSTIJDSCHEMA-BLOKKEN.Blok 16 C22 tm C29" |
| 72 | 2440.4266.4275.4810 | Opschonen bouwputten en bouwplaats | 3d | 2016-07-22 | 2016-07-26 |  | start no earlier than 2016-07-22 | 50155 | "3 UITVOERINGSTIJDSCHEMA-BLOKKEN.Blok 10 C01 tm C07" |
| 73 | 2440.4266.4275.4811 | Opschonen bouwputten en bouwplaats | 2d | 2016-07-27 | 2016-07-28 | 72 |  | 50165 | "3 UITVOERINGSTIJDSCHEMA-BLOKKEN.Blok 11 C08 tm C11" |
| 74 | 2440.4266.4275.4818 | Opschonen bouwputten en bouwplaats | 2d | 2016-07-29 | 2016-08-22 | 73 |  | 50175 | "3 UITVOERINGSTIJDSCHEMA-BLOKKEN.Blok 12 C12 tm C15" |

| ID | WBS | Task | Duration | Start | Finish | Predecessors | Constraint | Unique_Task_ID | CodeLibrary:"Legenda" |
| --- | --- | --- | --- | --- | --- | --- | --- | --- | --- |
| 75 | 2440.4266.4275.4819 | Opschonen bouwputten en bouwplaats | 1d | 2016-08-23 | 2016-08-23 | 74 |  | 50185 | "3 UITVOERINGSTIJDSCHEMA-BLOKKEN.Blok 13 C16 en C17" |
| 76 | 2440.4266.4275.4827 | Opschonen bouwputten en bouwplaats | 1d | 2016-08-24 | 2016-08-24 | 75 |  | 50195 | "3 UITVOERINGSTIJDSCHEMA-BLOKKEN.Blok 14 C18 en C19" |
| 77 | 2440.4266.4275.4828 | Opschonen bouwputten en bouwplaats | 1d | 2016-08-25 | 2016-08-25 | 76 |  | 50205 | "3 UITVOERINGSTIJDSCHEMA-BLOKKEN.Blok 15 C20 en C21" |
| 78 | 2440.4266.4275.4836 | Opschonen bouwputten en bouwplaats | 2d | 2016-08-26 | 2016-08-29 | 77 |  | 50215 | "3 UITVOERINGSTIJDSCHEMA-BLOKKEN.Blok 16 C22 tm C29" |
| 80 | 2440.4266.4268 | **BOVENBOUW** | 312h | 2016-07-22 | 2016-10-07 |  | start no earlier than 2016-07-22 | 30466 | "3 UITVOERINGSTIJDSCHEMA-BLOKKEN.Blok 10 C01 tm C07" |
| 81 | 2440.4266.4268.4391 | Maatvoering op begane grondvloer | 1d | 2016-07-22 | 2016-07-22 | 72SS+3.3% |  | 36235 | "3 UITVOERINGSTIJDSCHEMA-BLOKKEN.Blok 10 C01 tm C07" |
| 82 | 2440.4266.4268.4392 | Maatvoering op begane grondvloer | 1d | 2016-07-27 | 2016-07-27 | 81 |  | 36245 | "3 UITVOERINGSTIJDSCHEMA-BLOKKEN.Blok 11 C08 tm C11" |
| 83 | 2440.4266.4268.4393 | Maatvoering op begane grondvloer | 1d | 2016-08-22 | 2016-08-22 | 82 |  | 36255 | "3 UITVOERINGSTIJDSCHEMA-BLOKKEN.Blok 12 C12 tm C15" |
| 84 | 2440.4266.4268.4397 | Maatvoering op begane grondvloer | 1d | 2016-08-26 | 2016-08-26 | 83 |  | 36295 | "3 UITVOERINGSTIJDSCHEMA-BLOKKEN.Blok 13 C16 en C17" |
| 85 | 2440.4266.4268.4398 | Maatvoering op begane grondvloer | 1d | 2016-08-30 | 2016-08-30 | 84 |  | 36305 | "3 UITVOERINGSTIJDSCHEMA-BLOKKEN.Blok 14 C18 en C19" |
| 86 | 2440.4266.4268.4399 | Maatvoering op begane grondvloer | 1d | 2016-09-01 | 2016-09-01 | 85 |  | 36315 | "3 UITVOERINGSTIJDSCHEMA-BLOKKEN.Blok 15 C20 en C21" |
| 87 | 2440.4266.4268.4846 | Maatvoering op begane grondvloer | 1d | 2016-09-05 | 2016-09-05 | 86 |  | 50245 | "3 UITVOERINGSTIJDSCHEMA-BLOKKEN.Blok 16 C22 tm C29" |
| 88 | 2440.4266.4268.4400 | Opperen en kimmen | 3d | 2016-07-25 | 2016-07-27 |  | start no earlier than 2016-07-25 | 36325 | "3 UITVOERINGSTIJDSCHEMA-BLOKKEN.Blok 10 C01 tm C07" |
| 89 | 2440.4266.4268.4401 | Opperen en kimmen | 2d | 2016-07-29 | 2016-08-22 | 88 |  | 36335 | "3 UITVOERINGSTIJDSCHEMA-BLOKKEN.Blok 11 C08 tm C11" |
| 90 | 2440.4266.4268.4402 | Opperen en kimmen | 2d | 2016-08-24 | 2016-08-25 | 89 |  | 36345 | "3 UITVOERINGSTIJDSCHEMA-BLOKKEN.Blok 12 C12 tm C15" |
| 91 | 2440.4266.4268.4406 | Opperen en kimmen | 2d | 2016-08-29 | 2016-08-30 | 90 |  | 36385 | "3 UITVOERINGSTIJDSCHEMA-BLOKKEN.Blok 13 C16 en C17" |
| 92 | 2440.4266.4268.4407 | Opperen en kimmen | 2d | 2016-08-31 | 2016-09-01 | 91 |  | 46255 | "3 UITVOERINGSTIJDSCHEMA-BLOKKEN.Blok 14 C18 en C19" |
| 93 | 2440.4266.4268.4408 | Opperen en kimmen | 2d | 2016-09-02 | 2016-09-05 | 92 |  | 46245 | "3 UITVOERINGSTIJDSCHEMA-BLOKKEN.Blok 15 C20 en C21" |
| 94 | 2440.4266.4268.4845 | Opperen en kimmen | 3d | 2016-09-06 | 2016-09-09 | 93 |  | 50235 | "3 UITVOERINGSTIJDSCHEMA-BLOKKEN.Blok 16 C22 tm C29" |
| 95 | 2440.4266.4268.4409 | Lijmwerk kalkzandsteen elementen | 4d | 2016-07-27 | 2016-08-22 |  | start no earlier than 2016-07-27 | 31235 | "3 UITVOERINGSTIJDSCHEMA-BLOKKEN.Blok 10 C01 tm C07" |
| 96 | 2440.4266.4268.4410 | Lijmwerk kalkzandsteen elementen | 3d | 2016-08-23 | 2016-08-25 | 95 |  | 36415 | "3 UITVOERINGSTIJDSCHEMA-BLOKKEN.Blok 11 C08 tm C11" |
| 97 | 2440.4266.4268.4411 | Lijmwerk kalkzandsteen elementen | 3d | 2016-08-26 | 2016-08-30 | 96 |  | 36425 | "3 UITVOERINGSTIJDSCHEMA-BLOKKEN.Blok 12 C12 tm C15" |
| 98 | 2440.4266.4268.4415 | Lijmwerk kalkzandsteen elementen | 2d | 2016-08-31 | 2016-09-01 | 97 |  | 36485 | "3 UITVOERINGSTIJDSCHEMA-BLOKKEN.Blok 13 C16 en C17" |
| 99 | 2440.4266.4268.4416 | Lijmwerk kalkzandsteen elementen | 2d | 2016-09-02 | 2016-09-05 | 98 |  | 36495 | "3 UITVOERINGSTIJDSCHEMA-BLOKKEN.Blok 14 C18 en C19" |
| 100 | 2440.4266.4268.4417 | Lijmwerk kalkzandsteen elementen | 2d | 2016-09-06 | 2016-09-08 | 99 |  | 36405 | "3 UITVOERINGSTIJDSCHEMA-BLOKKEN.Blok 15 C20 en C21" |
| 101 | 2440.4266.4268.4837 | Lijmwerk kalkzandsteen elementen | 4d | 2016-09-09 | 2016-09-14 | 100 |  | 50225 | "3 UITVOERINGSTIJDSCHEMA-BLOKKEN.Blok 16 C22 tm C29" |
| 103 | 2440.4266.4268.4418 | Vooropperen ytong beganegrond | 1d | 2016-08-22 | 2016-08-22 |  | start no earlier than 2016-08-22 | 36505 | "3 UITVOERINGSTIJDSCHEMA-BLOKKEN.Blok 10 C01 tm C07" |
| 104 | 2440.4266.4268.4419 | Vooropperen ytong beganegrond | 1d | 2016-08-24 | 2016-08-24 | 103 |  | 36515 | "3 UITVOERINGSTIJDSCHEMA-BLOKKEN.Blok 11 C08 tm C11" |
| 105 | 2440.4266.4268.4420 | Vooropperen ytong beganegrond | 1d | 2016-08-29 | 2016-08-29 | 104 |  | 36525 | "3 UITVOERINGSTIJDSCHEMA-BLOKKEN.Blok 12 C12 tm C15" |
| 106 | 2440.4266.4268.4424 | Vooropperen ytong beganegrond | 1d | 2016-08-31 | 2016-08-31 | 105 |  | 36565 | "3 UITVOERINGSTIJDSCHEMA-BLOKKEN.Blok 13 C16 en C17" |
| 107 | 2440.4266.4268.4425 | Vooropperen ytong beganegrond | 1d | 2016-09-02 | 2016-09-02 | 106 |  | 36575 | "3 UITVOERINGSTIJDSCHEMA-BLOKKEN.Blok 14 C18 en C19" |
| 108 | 2440.4266.4268.4426 | Vooropperen ytong beganegrond | 1d | 2016-09-06 | 2016-09-06 | 107 |  | 36585 | "3 UITVOERINGSTIJDSCHEMA-BLOKKEN.Blok 15 C20 en C21" |
| 109 | 2440.4266.4268.4854 | Vooropperen ytong beganegrond | 1d | 2016-09-09 | 2016-09-09 | 108 |  | 50255 | "3 UITVOERINGSTIJDSCHEMA-BLOKKEN.Blok 16 C22 tm C29" |
| 110 | 2440.4266.4268.4427 | Kanaalplaatvloer 1e verd leggen | 2d | 2016-08-22 | 2016-08-23 |  | start no earlier than 2016-08-22 | 31275 | "3 UITVOERINGSTIJDSCHEMA-BLOKKEN.Blok 10 C01 tm C07" |
| 111 | 2440.4266.4268.4428 | Kanaalplaatvloer 1e verd leggen | 2d | 2016-08-24 | 2016-08-25 | 110 |  | 36595 | "3 UITVOERINGSTIJDSCHEMA-BLOKKEN.Blok 11 C08 tm C11" |
| 112 | 2440.4266.4268.4429 | Kanaalplaatvloer 1e verd leggen | 2d | 2016-08-29 | 2016-08-30 | 111 |  | 36605 | "3 UITVOERINGSTIJDSCHEMA-BLOKKEN.Blok 12 C12 tm C15" |
| 113 | 2440.4266.4268.4433 | Kanaalplaatvloer 1e verd leggen | 1d | 2016-09-01 | 2016-09-01 | 112 |  | 36645 | "3 UITVOERINGSTIJDSCHEMA-BLOKKEN.Blok 13 C16 en C17" |
| 114 | 2440.4266.4268.4434 | Kanaalplaatvloer 1e verd leggen | 1d | 2016-09-05 | 2016-09-05 | 113 |  | 36655 | "3 UITVOERINGSTIJDSCHEMA-BLOKKEN.Blok 14 C18 en C19" |
| 115 | 2440.4266.4268.4435 | Kanaalplaatvloer 1e verd leggen | 1d | 2016-09-08 | 2016-09-08 | 114 |  | 36665 | "3 UITVOERINGSTIJDSCHEMA-BLOKKEN.Blok 15 C20 en C21" |
| 116 | 2440.4266.4268.4855 | Kanaalplaatvloer 1e verd leggen | 2d | 2016-09-12 | 2016-09-13 | 115 |  | 50265 | "3 UITVOERINGSTIJDSCHEMA-BLOKKEN.Blok 16 C22 tm C29" |
| 117 | 2440.4266.4268.4436 | Veiligheid en trapgaten dichten | 1d | 2016-08-23 | 2016-08-23 |  | start no earlier than 2016-08-23 | 36675 | "3 UITVOERINGSTIJDSCHEMA-BLOKKEN.Blok 10 C01 tm C07" |
| 118 | 2440.4266.4268.4437 | Veiligheid en trapgaten dichten | 1d | 2016-08-26 | 2016-08-26 | 117 |  | 36685 | "3 UITVOERINGSTIJDSCHEMA-BLOKKEN.Blok 11 C08 tm C11" |
| 119 | 2440.4266.4268.4438 | Veiligheid en trapgaten dichten | 1d | 2016-08-30 | 2016-08-30 | 118 |  | 36695 | "3 UITVOERINGSTIJDSCHEMA-BLOKKEN.Blok 12 C12 tm C15" |
| 120 | 2440.4266.4268.4442 | Veiligheid en trapgaten dichten | 1d | 2016-09-02 | 2016-09-02 | 119 |  | 36735 | "3 UITVOERINGSTIJDSCHEMA-BLOKKEN.Blok 13 C16 en C17" |
| 121 | 2440.4266.4268.4443 | Veiligheid en trapgaten dichten | 1d | 2016-09-06 | 2016-09-06 | 120 |  | 36745 | "3 UITVOERINGSTIJDSCHEMA-BLOKKEN.Blok 14 C18 en C19" |
| 122 | 2440.4266.4268.4444 | Veiligheid en trapgaten dichten | 1d | 2016-09-09 | 2016-09-09 | 121 |  | 36755 | "3 UITVOERINGSTIJDSCHEMA-BLOKKEN.Blok 15 C20 en C21" |
| 123 | 2440.4266.4268.4863 | Veiligheid en trapgaten dichten | 1d | 2016-09-13 | 2016-09-13 | 122 |  | 50275 | "3 UITVOERINGSTIJDSCHEMA-BLOKKEN.Blok 16 C22 tm C29" |
| 124 | 2440.4266.4268.4445 | Stortklaar maken en afstorten naden verd. vloer | 1d | 2016-08-24 | 2016-08-24 |  | start no earlier than 2016-08-24 | 36765 | "3 UITVOERINGSTIJDSCHEMA-BLOKKEN.Blok 10 C01 tm C07" |
| 125 | 2440.4266.4268.4446 | Stortklaar maken en afstorten naden verd. vloer | 1d | 2016-08-26 | 2016-08-26 | 124 |  | 36775 | "3 UITVOERINGSTIJDSCHEMA-BLOKKEN.Blok 11 C08 tm C11" |
| 126 | 2440.4266.4268.4447 | Stortklaar maken en afstorten naden verd. vloer | 1d | 2016-08-31 | 2016-08-31 | 125 |  | 36785 | "3 UITVOERINGSTIJDSCHEMA-BLOKKEN.Blok 12 C12 tm C15" |
| 127 | 2440.4266.4268.4451 | Stortklaar maken en afstorten naden verd. vloer | 1d | 2016-09-05 | 2016-09-05 | 126 |  | 36825 | "3 UITVOERINGSTIJDSCHEMA-BLOKKEN.Blok 13 C16 en C17" |
| 128 | 2440.4266.4268.4452 | Stortklaar maken en afstorten naden verd. vloer | 1d | 2016-09-08 | 2016-09-08 | 127 |  | 36835 | "3 UITVOERINGSTIJDSCHEMA-BLOKKEN.Blok 14 C18 en C19" |
| 129 | 2440.4266.4268.4453 | Stortklaar maken en afstorten naden verd. vloer | 1d | 2016-09-12 | 2016-09-12 | 128 |  | 36845 | "3 UITVOERINGSTIJDSCHEMA-BLOKKEN.Blok 15 C20 en C21" |
| 130 | 2440.4266.4268.4864 | Stortklaar maken en afstorten naden verd. vloer | 1d | 2016-09-14 | 2016-09-14 | 129 |  | 50285 | "3 UITVOERINGSTIJDSCHEMA-BLOKKEN.Blok 16 C22 tm C29" |
| 131 | 2440.4266.4268.4454 | Bandstaal aanbrengen | 1d | 2016-08-25 | 2016-08-25 |  | start no earlier than 2016-08-25 | 31615 | "3 UITVOERINGSTIJDSCHEMA-BLOKKEN.Blok 10 C01 tm C07" |
| 132 | 2440.4266.4268.4455 | Bandstaal aanbrengen | 1d | 2016-08-29 | 2016-08-29 | 131 |  | 36855 | "3 UITVOERINGSTIJDSCHEMA-BLOKKEN.Blok 11 C08 tm C11" |
| 133 | 2440.4266.4268.4456 | Bandstaal aanbrengen | 1d | 2016-09-01 | 2016-09-01 | 132 |  | 36865 | "3 UITVOERINGSTIJDSCHEMA-BLOKKEN.Blok 12 C12 tm C15" |
| 134 | 2440.4266.4268.4460 | Bandstaal aanbrengen | 1d | 2016-09-06 | 2016-09-06 | 133 |  | 36905 | "3 UITVOERINGSTIJDSCHEMA-BLOKKEN.Blok 13 C16 en C17" |
| 135 | 2440.4266.4268.4461 | Bandstaal aanbrengen | 1d | 2016-09-09 | 2016-09-09 | 134 |  | 36915 | "3 UITVOERINGSTIJDSCHEMA-BLOKKEN.Blok 14 C18 en C19" |
| 136 | 2440.4266.4268.4462 | Bandstaal aanbrengen | 1d | 2016-09-13 | 2016-09-13 | 135 |  | 36925 | "3 UITVOERINGSTIJDSCHEMA-BLOKKEN.Blok 15 C20 en C21" |
| 137 | 2440.4266.4268.4872 | Bandstaal aanbrengen | 1d | 2016-09-15 | 2016-09-15 | 136 |  | 50295 | "3 UITVOERINGSTIJDSCHEMA-BLOKKEN.Blok 16 C22 tm C29" |
| 138 | 2440.4266.4268.4463 | Maatvoering 1e verdiepingsvloer | 1d | 2016-08-25 | 2016-08-25 |  | start no earlier than 2016-08-25 | 36935 | "3 UITVOERINGSTIJDSCHEMA-BLOKKEN.Blok 10 C01 tm C07" |
| 139 | 2440.4266.4268.4464 | Maatvoering 1e verdiepingsvloer | 1d | 2016-08-29 | 2016-08-29 | 138 |  | 36945 | "3 UITVOERINGSTIJDSCHEMA-BLOKKEN.Blok 11 C08 tm C11" |
| 140 | 2440.4266.4268.4465 | Maatvoering 1e verdiepingsvloer | 1d | 2016-09-01 | 2016-09-01 | 139 |  | 36955 | "3 UITVOERINGSTIJDSCHEMA-BLOKKEN.Blok 12 C12 tm C15" |
| 141 | 2440.4266.4268.4469 | Maatvoering 1e verdiepingsvloer | 1d | 2016-09-06 | 2016-09-06 | 140 |  | 36995 | "3 UITVOERINGSTIJDSCHEMA-BLOKKEN.Blok 13 C16 en C17" |
| 142 | 2440.4266.4268.4470 | Maatvoering 1e verdiepingsvloer | 1d | 2016-09-09 | 2016-09-09 | 141 |  | 37005 | "3 UITVOERINGSTIJDSCHEMA-BLOKKEN.Blok 14 C18 en C19" |
| 143 | 2440.4266.4268.4471 | Maatvoering 1e verdiepingsvloer | 1d | 2016-09-13 | 2016-09-13 | 142 |  | 37195 | "3 UITVOERINGSTIJDSCHEMA-BLOKKEN.Blok 15 C20 en C21" |
| 144 | 2440.4266.4268.4873 | Maatvoering 1e verdiepingsvloer | 1d | 2016-09-15 | 2016-09-15 | 143 |  | 50305 | "3 UITVOERINGSTIJDSCHEMA-BLOKKEN.Blok 16 C22 tm C29" |
| 145 | 2440.4266.4268.4472 | Opperen en kimmen | 3d | 2016-08-26 | 2016-08-30 |  | start no earlier than 2016-08-26 | 31825 | "3 UITVOERINGSTIJDSCHEMA-BLOKKEN.Blok 10 C01 tm C07" |
| 146 | 2440.4266.4268.4473 | Opperen en kimmen | 2d | 2016-08-31 | 2016-09-01 | 145 |  | 37025 | "3 UITVOERINGSTIJDSCHEMA-BLOKKEN.Blok 11 C08 tm C11" |

| ID | WBS | Task | Duration | Start | Finish | Predecessors | Constraint | Unique_Task_ID | CodeLibrary:"Legenda" |
| --- | --- | --- | --- | --- | --- | --- | --- | --- | --- |
| 147 | 2440.4266.4268.4474 | Opperen en kimmen | 2d | 2016-09-02 | 2016-09-05 | 146 |  | 37035 | "3 UITVOERINGSTIJDSCHEMA-BLOKKEN.Blok 12 C12 tm C15" |
| 148 | 2440.4266.4268.4478 | Opperen en kimmen | 2d | 2016-09-08 | 2016-09-09 | 147 |  | 37085 | "3 UITVOERINGSTIJDSCHEMA-BLOKKEN.Blok 13 C16 en C17" |
| 149 | 2440.4266.4268.4479 | Opperen en kimmen | 2d | 2016-09-12 | 2016-09-13 | 148 |  | 37095 | "3 UITVOERINGSTIJDSCHEMA-BLOKKEN.Blok 14 C18 en C19" |
| 150 | 2440.4266.4268.4480 | Opperen en kimmen | 2d | 2016-09-14 | 2016-09-15 | 149 |  | 37015 | "3 UITVOERINGSTIJDSCHEMA-BLOKKEN.Blok 15 C20 en C21" |
| 151 | 2440.4266.4268.4881 | Opperen en kimmen | 3d | 2016-09-16 | 2016-09-20 | 150 |  | 50315 | "3 UITVOERINGSTIJDSCHEMA-BLOKKEN.Blok 16 C22 tm C29" |
| 152 | 2440.4266.4268.4481 | Lijmwerk 1e verdieping kalkzandsteen | 4d | 2016-08-30 | 2016-09-02 |  | start no earlier than 2016-08-30 | 37105 | "3 UITVOERINGSTIJDSCHEMA-BLOKKEN.Blok 10 C01 tm C07" |
| 153 | 2440.4266.4268.4482 | Lijmwerk 1e verdieping kalkzandsteen | 3d | 2016-09-05 | 2016-09-08 | 152 |  | 37115 | "3 UITVOERINGSTIJDSCHEMA-BLOKKEN.Blok 11 C08 tm C11" |
| 154 | 2440.4266.4268.4483 | Lijmwerk 1e verdieping kalkzandsteen | 3d | 2016-09-09 | 2016-09-13 | 153 |  | 37125 | "3 UITVOERINGSTIJDSCHEMA-BLOKKEN.Blok 12 C12 tm C15" |
| 155 | 2440.4266.4268.4487 | Lijmwerk 1e verdieping kalkzandsteen | 2d | 2016-09-14 | 2016-09-15 | 154 |  | 37165 | "3 UITVOERINGSTIJDSCHEMA-BLOKKEN.Blok 13 C16 en C17" |
| 156 | 2440.4266.4268.4488 | Lijmwerk 1e verdieping kalkzandsteen | 2d | 2016-09-16 | 2016-09-19 | 155 |  | 37175 | "3 UITVOERINGSTIJDSCHEMA-BLOKKEN.Blok 14 C18 en C19" |
| 157 | 2440.4266.4268.4489 | Lijmwerk 1e verdieping kalkzandsteen | 2d | 2016-09-20 | 2016-09-21 | 156 |  | 37185 | "3 UITVOERINGSTIJDSCHEMA-BLOKKEN.Blok 15 C20 en C21" |
| 158 | 2440.4266.4268.4882 | Lijmwerk 1e verdieping kalkzandsteen | 4d | 2016-09-22 | 2016-09-27 | 157 |  | 50325 | "3 UITVOERINGSTIJDSCHEMA-BLOKKEN.Blok 16 C22 tm C29" |
| 160 | 2440.4266.4268.4490 | Vooropperen ytong 1e verdieping | 1d | 2016-09-06 | 2016-09-06 |  | start no earlier than 2016-09-06 | 37205 | "3 UITVOERINGSTIJDSCHEMA-BLOKKEN.Blok 10 C01 tm C07" |
| 161 | 2440.4266.4268.4491 | Vooropperen ytong 1e verdieping | 1d | 2016-09-08 | 2016-09-08 | 160 |  | 37215 | "3 UITVOERINGSTIJDSCHEMA-BLOKKEN.Blok 11 C08 tm C11" |
| 162 | 2440.4266.4268.4492 | Vooropperen ytong 1e verdieping | 1d | 2016-09-13 | 2016-09-13 | 161 |  | 37225 | "3 UITVOERINGSTIJDSCHEMA-BLOKKEN.Blok 12 C12 tm C15" |
| 163 | 2440.4266.4268.4496 | Vooropperen ytong 1e verdieping | 1d | 2016-09-15 | 2016-09-15 | 162 |  | 37265 | "3 UITVOERINGSTIJDSCHEMA-BLOKKEN.Blok 13 C16 en C17" |
| 164 | 2440.4266.4268.4497 | Vooropperen ytong 1e verdieping | 1d | 2016-09-19 | 2016-09-19 | 163 |  | 37275 | "3 UITVOERINGSTIJDSCHEMA-BLOKKEN.Blok 14 C18 en C19" |
| 165 | 2440.4266.4268.4498 | Vooropperen ytong 1e verdieping | 1d | 2016-09-21 | 2016-09-21 | 164 |  | 37285 | "3 UITVOERINGSTIJDSCHEMA-BLOKKEN.Blok 15 C20 en C21" |
| 166 | 2440.4266.4268.4918 | Vooropperen ytong 1e verdieping | 1d | 2016-09-26 | 2016-09-26 | 165 |  | 50405 | "3 UITVOERINGSTIJDSCHEMA-BLOKKEN.Blok 16 C22 tm C29" |
| 167 | 2440.4266.4268.4499 | Kanaalplaat zolder leggen | 2d | 2016-09-08 | 2016-09-09 |  | start no earlier than 2016-09-08 | 37305 | "3 UITVOERINGSTIJDSCHEMA-BLOKKEN.Blok 11 C08 tm C11" |
| 168 | 2440.4266.4268.4500 | Kanaalplaat zolder leggen | 2d | 2016-09-13 | 2016-09-14 | 167 |  | 37315 | "3 UITVOERINGSTIJDSCHEMA-BLOKKEN.Blok 12 C12 tm C15" |
| 169 | 2440.4266.4268.4504 | Kanaalplaat zolder leggen | 1d | 2016-09-16 | 2016-09-16 | 168 |  | 37355 | "3 UITVOERINGSTIJDSCHEMA-BLOKKEN.Blok 13 C16 en C17" |
| 170 | 2440.4266.4268.4505 | Kanaalplaat zolder leggen | 1d | 2016-09-20 | 2016-09-20 | 169 |  | 37365 | "3 UITVOERINGSTIJDSCHEMA-BLOKKEN.Blok 14 C18 en C19" |
| 171 | 2440.4266.4268.4506 | Kanaalplaat zolder leggen | 1d | 2016-09-22 | 2016-09-22 | 170 |  | 37375 | "3 UITVOERINGSTIJDSCHEMA-BLOKKEN.Blok 15 C20 en C21" |
| 172 | 2440.4266.4268.4917 | Kanaalplaat zolder leggen | 2d | 2016-09-26 | 2016-09-27 | 171 |  | 50395 | "3 UITVOERINGSTIJDSCHEMA-BLOKKEN.Blok 16 C22 tm C29" |
| 173 | 2440.4266.4268.4507 | Veiligheid en trapgaten dichten | 1d | 2016-09-12 | 2016-09-12 |  | start no earlier than 2016-09-12 | 37395 | "3 UITVOERINGSTIJDSCHEMA-BLOKKEN.Blok 11 C08 tm C11" |
| 174 | 2440.4266.4268.4508 | Veiligheid en trapgaten dichten | 1d | 2016-09-15 | 2016-09-15 | 173 |  | 37405 | "3 UITVOERINGSTIJDSCHEMA-BLOKKEN.Blok 12 C12 tm C15" |
| 175 | 2440.4266.4268.4512 | Veiligheid en trapgaten dichten | 1d | 2016-09-20 | 2016-09-20 | 174 |  | 37445 | "3 UITVOERINGSTIJDSCHEMA-BLOKKEN.Blok 13 C16 en C17" |
| 176 | 2440.4266.4268.4513 | Veiligheid en trapgaten dichten | 1d | 2016-09-22 | 2016-09-22 | 175 |  | 37455 | "3 UITVOERINGSTIJDSCHEMA-BLOKKEN.Blok 14 C18 en C19" |
| 177 | 2440.4266.4268.4514 | Veiligheid en trapgaten dichten | 1d | 2016-09-26 | 2016-09-26 | 176 |  | 37465 | "3 UITVOERINGSTIJDSCHEMA-BLOKKEN.Blok 15 C20 en C21" |
| 178 | 2440.4266.4268.4909 | Veiligheid en trapgaten dichten | 1d | 2016-09-28 | 2016-09-28 | 177 |  | 50385 | "3 UITVOERINGSTIJDSCHEMA-BLOKKEN.Blok 16 C22 tm C29" |
| 179 | 2440.4266.4268.4515 | Stortklaar maken en afstorten naden zoldervloer | 1d | 2016-09-13 | 2016-09-13 |  | start no earlier than 2016-09-13 | 37575 | "3 UITVOERINGSTIJDSCHEMA-BLOKKEN.Blok 11 C08 tm C11" |
| 180 | 2440.4266.4268.4516 | Stortklaar maken en afstorten naden zoldervloer | 1d | 2016-09-16 | 2016-09-16 | 179 |  | 37585 | "3 UITVOERINGSTIJDSCHEMA-BLOKKEN.Blok 12 C12 tm C15" |
| 181 | 2440.4266.4268.4520 | Stortklaar maken en afstorten naden zoldervloer | 1d | 2016-09-21 | 2016-09-21 | 180 |  | 37625 | "3 UITVOERINGSTIJDSCHEMA-BLOKKEN.Blok 13 C16 en C17" |
| 182 | 2440.4266.4268.4521 | Stortklaar maken en afstorten naden zoldervloer | 1d | 2016-09-23 | 2016-09-23 | 181 |  | 37635 | "3 UITVOERINGSTIJDSCHEMA-BLOKKEN.Blok 14 C18 en C19" |
| 183 | 2440.4266.4268.4522 | Stortklaar maken en afstorten naden zoldervloer | 1d | 2016-09-27 | 2016-09-27 | 182 |  | 37645 | "3 UITVOERINGSTIJDSCHEMA-BLOKKEN.Blok 15 C20 en C21" |
| 184 | 2440.4266.4268.4908 | Stortklaar maken en afstorten naden zoldervloer | 1d | 2016-09-29 | 2016-09-29 | 183 |  | 50375 | "3 UITVOERINGSTIJDSCHEMA-BLOKKEN.Blok 16 C22 tm C29" |
| 185 | 2440.4266.4268.4523 | Bandstaal aanbrengen | 1d | 2016-09-14 | 2016-09-14 |  | start no earlier than 2016-09-14 | 37485 | "3 UITVOERINGSTIJDSCHEMA-BLOKKEN.Blok 11 C08 tm C11" |
| 186 | 2440.4266.4268.4524 | Bandstaal aanbrengen | 1d | 2016-09-19 | 2016-09-19 | 185 |  | 37495 | "3 UITVOERINGSTIJDSCHEMA-BLOKKEN.Blok 12 C12 tm C15" |
| 187 | 2440.4266.4268.4528 | Bandstaal aanbrengen | 1d | 2016-09-22 | 2016-09-22 | 186 |  | 37535 | "3 UITVOERINGSTIJDSCHEMA-BLOKKEN.Blok 13 C16 en C17" |
| 188 | 2440.4266.4268.4529 | Bandstaal aanbrengen | 1d | 2016-09-26 | 2016-09-26 | 187 |  | 37545 | "3 UITVOERINGSTIJDSCHEMA-BLOKKEN.Blok 14 C18 en C19" |
| 189 | 2440.4266.4268.4530 | Bandstaal aanbrengen | 1d | 2016-09-28 | 2016-09-28 | 188 |  | 37555 | "3 UITVOERINGSTIJDSCHEMA-BLOKKEN.Blok 15 C20 en C21" |
| 190 | 2440.4266.4268.4900 | Bandstaal aanbrengen | 1d | 2016-09-30 | 2016-09-30 | 189 |  | 50365 | "3 UITVOERINGSTIJDSCHEMA-BLOKKEN.Blok 16 C22 tm C29" |
| 191 | 2440.4266.4268.4531 | Maatvoering 2e verdieping | 1d | 2016-09-14 | 2016-09-14 |  | start no earlier than 2016-09-14 | 37665 | "3 UITVOERINGSTIJDSCHEMA-BLOKKEN.Blok 11 C08 tm C11" |
| 192 | 2440.4266.4268.4532 | Maatvoering 2e verdieping | 1d | 2016-09-19 | 2016-09-19 | 191 |  | 37675 | "3 UITVOERINGSTIJDSCHEMA-BLOKKEN.Blok 12 C12 tm C15" |
| 193 | 2440.4266.4268.4536 | Maatvoering 2e verdieping | 1d | 2016-09-22 | 2016-09-22 | 192 |  | 37715 | "3 UITVOERINGSTIJDSCHEMA-BLOKKEN.Blok 13 C16 en C17" |
| 194 | 2440.4266.4268.4537 | Maatvoering 2e verdieping | 1d | 2016-09-26 | 2016-09-26 | 193 |  | 37725 | "3 UITVOERINGSTIJDSCHEMA-BLOKKEN.Blok 14 C18 en C19" |
| 195 | 2440.4266.4268.4538 | Maatvoering 2e verdieping | 1d | 2016-09-28 | 2016-09-28 | 194 |  | 37735 | "3 UITVOERINGSTIJDSCHEMA-BLOKKEN.Blok 15 C20 en C21" |
| 196 | 2440.4266.4268.4899 | Maatvoering 2e verdieping | 1d | 2016-09-30 | 2016-09-30 | 195 |  | 50355 | "3 UITVOERINGSTIJDSCHEMA-BLOKKEN.Blok 16 C22 tm C29" |
| 197 | 2440.4266.4268.4539 | Opperen en kimmen | 1d | 2016-09-15 | 2016-09-15 |  | start no earlier than 2016-09-15 | 37755 | "3 UITVOERINGSTIJDSCHEMA-BLOKKEN.Blok 11 C08 tm C11" |
| 198 | 2440.4266.4268.4540 | Opperen en kimmen | 1d | 2016-09-20 | 2016-09-20 | 197 |  | 37765 | "3 UITVOERINGSTIJDSCHEMA-BLOKKEN.Blok 12 C12 tm C15" |
| 199 | 2440.4266.4268.4544 | Opperen en kimmen | 1d | 2016-09-23 | 2016-09-23 | 198 |  | 37805 | "3 UITVOERINGSTIJDSCHEMA-BLOKKEN.Blok 13 C16 en C17" |
| 200 | 2440.4266.4268.4545 | Opperen en kimmen | 1d | 2016-09-27 | 2016-09-27 | 199 |  | 37815 | "3 UITVOERINGSTIJDSCHEMA-BLOKKEN.Blok 14 C18 en C19" |
| 201 | 2440.4266.4268.4546 | Opperen en kimmen | 1d | 2016-09-29 | 2016-09-29 | 200 |  | 37925 | "3 UITVOERINGSTIJDSCHEMA-BLOKKEN.Blok 15 C20 en C21" |
| 202 | 2440.4266.4268.4891 | Opperen en kimmen | 1d | 2016-10-03 | 2016-10-03 | 201 |  | 50345 | "3 UITVOERINGSTIJDSCHEMA-BLOKKEN.Blok 16 C22 tm C29" |
| 203 | 2440.4266.4268.4283 | Lijmwerk 2e verdieping kalkzandsteen | 3d | 2016-09-16 | 2016-09-20 |  | start no earlier than 2016-09-16 | 37855 | "3 UITVOERINGSTIJDSCHEMA-BLOKKEN.Blok 11 C08 tm C11" |
| 204 | 2440.4266.4268.4547 | Lijmwerk 2e verdieping kalkzandsteen | 3d | 2016-09-21 | 2016-09-23 | 203 |  | 37865 | "3 UITVOERINGSTIJDSCHEMA-BLOKKEN.Blok 12 C12 tm C15" |
| 205 | 2440.4266.4268.4551 | Lijmwerk 2e verdieping kalkzandsteen | 2d | 2016-09-26 | 2016-09-27 | 204 |  | 37905 | "3 UITVOERINGSTIJDSCHEMA-BLOKKEN.Blok 13 C16 en C17" |
| 206 | 2440.4266.4268.4552 | Lijmwerk 2e verdieping kalkzandsteen | 2d | 2016-09-28 | 2016-09-29 | 205 |  | 37915 | "3 UITVOERINGSTIJDSCHEMA-BLOKKEN.Blok 14 C18 en C19" |
| 207 | 2440.4266.4268.4553 | Lijmwerk 2e verdieping kalkzandsteen | 2d | 2016-09-30 | 2016-10-03 | 206 |  | 37825 | "3 UITVOERINGSTIJDSCHEMA-BLOKKEN.Blok 15 C20 en C21" |
| 208 | 2440.4266.4268.4890 | Lijmwerk 2e verdieping kalkzandsteen | 3d | 2016-10-04 | 2016-10-07 | 207 |  | 50335 | "3 UITVOERINGSTIJDSCHEMA-BLOKKEN.Blok 16 C22 tm C29" |

| ID | WBS | Task | Duration | Start | Finish | Predecessors | Constraint | Unique_Task_ID | CodeLibrary:"Legenda" |
| --- | --- | --- | --- | --- | --- | --- | --- | --- | --- |
| 210 | 2440.4266.4269 | **Stel- Metselwerk** | 640h | 2016-09-01 | 2017-01-13 |  | start no earlier than 2016-09-01 | 30476 | "3 UITVOERINGSTIJDSCHEMA-BLOKKEN.Blok 10 C01 tm C07" |
| 211 | 2440.4266.4269.4554 | Stelwerk begane grond | 6d | 2016-09-01 | 2016-09-09 |  | start no earlier than 2016-09-01 | 37935 | "3 UITVOERINGSTIJDSCHEMA-BLOKKEN.Blok 10 C01 tm C07" |
| 212 | 2440.4266.4269.4284 | Stelwerk begane grond | 4d | 2016-09-12 | 2016-09-15 | 167, 211 |  | 37945 | "3 UITVOERINGSTIJDSCHEMA-BLOKKEN.Blok 11 C08 tm C11" |
| 213 | 2440.4266.4269.4555 | Stelwerk begane grond | 4d | 2016-09-16 | 2016-09-21 | 212 |  | 37955 | "3 UITVOERINGSTIJDSCHEMA-BLOKKEN.Blok 12 C12 tm C15" |
| 214 | 2440.4266.4269.4559 | Stelwerk begane grond | 3d | 2016-09-22 | 2016-09-26 | 213 |  | 37995 | "3 UITVOERINGSTIJDSCHEMA-BLOKKEN.Blok 13 C16 en C17" |
| 215 | 2440.4266.4269.4560 | Stelwerk begane grond | 3d | 2016-09-27 | 2016-09-29 | 214 |  | 38005 | "3 UITVOERINGSTIJDSCHEMA-BLOKKEN.Blok 14 C18 en C19" |
| 216 | 2440.4266.4269.4561 | Stelwerk begane grond | 3d | 2016-09-30 | 2016-10-04 | 215 |  | 38015 | "3 UITVOERINGSTIJDSCHEMA-BLOKKEN.Blok 15 C20 en C21" |
| 217 | 2440.4266.4269.4926 | Stelwerk begane grond | 6d | 2016-10-06 | 2016-10-13 | 216 |  | 50415 | "3 UITVOERINGSTIJDSCHEMA-BLOKKEN.Blok 16 C22 tm C29" |
| 218 | 2440.4266.4269.4562 | Steiger opbouwen tot 1e verd vloer | 2d | 2016-09-09 | 2016-09-12 |  | start no earlier than 2016-09-09 | 28158 | "3 UITVOERINGSTIJDSCHEMA-BLOKKEN.Blok 10 C01 tm C07" |
| 219 | 2440.4266.4269.4563 | Steiger opbouwen tot 1e verd vloer | 4d | 2016-09-14 | 2016-09-19 | 218 |  | 30486 | "3 UITVOERINGSTIJDSCHEMA-BLOKKEN.Blok 11 C08 tm C11" |
| 220 | 2440.4266.4269.4564 | Steiger opbouwen tot 1e verd vloer | 4d | 2016-09-20 | 2016-09-23 | 219 |  | 38025 | "3 UITVOERINGSTIJDSCHEMA-BLOKKEN.Blok 12 C12 tm C15" |
| 221 | 2440.4266.4269.4568 | Steiger opbouwen tot 1e verd vloer | 3d | 2016-09-26 | 2016-09-28 | 220 |  | 38065 | "3 UITVOERINGSTIJDSCHEMA-BLOKKEN.Blok 13 C16 en C17" |
| 222 | 2440.4266.4269.4569 | Steiger opbouwen tot 1e verd vloer | 3d | 2016-09-29 | 2016-10-03 | 221 |  | 38075 | "3 UITVOERINGSTIJDSCHEMA-BLOKKEN.Blok 14 C18 en C19" |
| 223 | 2440.4266.4269.4570 | Steiger opbouwen tot 1e verd vloer | 3d | 2016-10-04 | 2016-10-07 | 222 |  | 38085 | "3 UITVOERINGSTIJDSCHEMA-BLOKKEN.Blok 15 C20 en C21" |
| 224 | 2440.4266.4269.4927 | Steiger opbouwen tot 1e verd vloer | 6d | 2016-10-10 | 2016-10-17 | 223 |  | 50425 | "3 UITVOERINGSTIJDSCHEMA-BLOKKEN.Blok 16 C22 tm C29" |
| 225 | 2440.4266.4269.4571 | Stelwerk 1e verdieping | 2d | 2016-09-13 | 2016-09-14 |  | start no earlier than 2016-09-13 | 28159 | "3 UITVOERINGSTIJDSCHEMA-BLOKKEN.Blok 10 C01 tm C07" |
| 226 | 2440.4266.4269.4572 | Stelwerk 1e verdieping | 4d | 2016-09-16 | 2016-09-21 | 225 |  | 38175 | "3 UITVOERINGSTIJDSCHEMA-BLOKKEN.Blok 11 C08 tm C11" |
| 227 | 2440.4266.4269.4573 | Stelwerk 1e verdieping | 4d | 2016-09-22 | 2016-09-27 | 226 |  | 38185 | "3 UITVOERINGSTIJDSCHEMA-BLOKKEN.Blok 12 C12 tm C15" |
| 228 | 2440.4266.4269.4577 | Stelwerk 1e verdieping | 2d | 2016-09-28 | 2016-09-29 | 227 |  | 38225 | "3 UITVOERINGSTIJDSCHEMA-BLOKKEN.Blok 13 C16 en C17" |
| 229 | 2440.4266.4269.4578 | Stelwerk 1e verdieping | 2d | 2016-10-03 | 2016-10-04 | 228 |  | 38235 | "3 UITVOERINGSTIJDSCHEMA-BLOKKEN.Blok 14 C18 en C19" |
| 230 | 2440.4266.4269.4579 | Stelwerk 1e verdieping | 2d | 2016-10-07 | 2016-10-10 | 229 |  | 38245 | "3 UITVOERINGSTIJDSCHEMA-BLOKKEN.Blok 15 C20 en C21" |
| 231 | 2440.4266.4269.4935 | Stelwerk 1e verdieping | 4d | 2016-10-14 | 2016-10-19 | 230 |  | 50435 | "3 UITVOERINGSTIJDSCHEMA-BLOKKEN.Blok 16 C22 tm C29" |
| 232 | 2440.4266.4269.4580 | Stelwerk gevelpanelen Rijwoningen | 2d | 2016-09-19 | 2016-09-20 |  | start no earlier than 2016-09-19 | 38265 | "3 UITVOERINGSTIJDSCHEMA-BLOKKEN.Blok 11 C08 tm C11" |
| 233 | 2440.4266.4269.4581 | Stelwerk gevelpanelen Rijwoningen | 2d | 2016-09-27 | 2016-09-28 | 232 |  | 38275 | "3 UITVOERINGSTIJDSCHEMA-BLOKKEN.Blok 12 C12 tm C15" |
| 234 | 2440.4266.4269.4980 | Stelwerk gevelpanelen Rijwoningen | 2d | 2016-09-30 | 2016-10-03 | 233 |  | 50535 | "3 UITVOERINGSTIJDSCHEMA-BLOKKEN.Blok 13 C16 en C17" |
| 235 | 2440.4266.4269.4981 | Stelwerk gevelpanelen Rijwoningen | 2d | 2016-10-06 | 2016-10-07 | 234 |  | 50545 | "3 UITVOERINGSTIJDSCHEMA-BLOKKEN.Blok 14 C18 en C19" |
| 236 | 2440.4266.4269.4989 | Stelwerk gevelpanelen Rijwoningen | 2d | 2016-10-11 | 2016-10-12 | 235 |  | 50555 | "3 UITVOERINGSTIJDSCHEMA-BLOKKEN.Blok 15 C20 en C21" |
| 237 | 2440.4266.4269.4936 | Stelwerk gevelpanelen Rijwoningen | 2d | 2016-10-18 | 2016-10-19 | 236 |  | 50445 | "3 UITVOERINGSTIJDSCHEMA-BLOKKEN.Blok 16 C22 tm C29" |
| 238 | 2440.4266.4269.4285 | Steiger opbouwen tot 2e verd vloer | 4d | 2016-09-22 | 2016-09-27 |  | start no earlier than 2016-09-22 | 49525 | "3 UITVOERINGSTIJDSCHEMA-BLOKKEN.Blok 11 C08 tm C11" |
| 239 | 2440.4266.4269.4585 | Steiger opbouwen tot 2e verd vloer | 4d | 2016-09-28 | 2016-10-03 | 238 |  | 49535 | "3 UITVOERINGSTIJDSCHEMA-BLOKKEN.Blok 12 C12 tm C15" |
| 240 | 2440.4266.4269.4589 | Steiger opbouwen tot 2e verd vloer | 3d | 2016-10-06 | 2016-10-10 | 239 |  | 49575 | "3 UITVOERINGSTIJDSCHEMA-BLOKKEN.Blok 13 C16 en C17" |
| 241 | 2440.4266.4269.4590 | Steiger opbouwen tot 2e verd vloer | 3d | 2016-10-11 | 2016-10-13 | 240 |  | 49585 | "3 UITVOERINGSTIJDSCHEMA-BLOKKEN.Blok 14 C18 en C19" |
| 242 | 2440.4266.4269.4591 | Steiger opbouwen tot 2e verd vloer | 3d | 2016-10-14 | 2016-10-18 | 241 |  | 49595 | "3 UITVOERINGSTIJDSCHEMA-BLOKKEN.Blok 15 C20 en C21" |
| 243 | 2440.4266.4269.4944 | Steiger opbouwen tot 2e verd vloer | 4d | 2016-10-20 | 2016-10-25 | 242 |  | 50455 | "3 UITVOERINGSTIJDSCHEMA-BLOKKEN.Blok 16 C22 tm C29" |
| 244 | 2440.4266.4269.4592 | Metselwerk begane grond fase 1 | 8d | 2016-09-06 | 2016-09-16 |  | start no earlier than 2016-09-06 | 38345 | "3 UITVOERINGSTIJDSCHEMA-BLOKKEN.Blok 10 C01 tm C07" |
| 245 | 2440.4266.4269.4593 | Metselwerk begane grond fase 1 | 4d | 2016-09-19 | 2016-09-22 | 244 |  | 38355 | "3 UITVOERINGSTIJDSCHEMA-BLOKKEN.Blok 11 C08 tm C11" |
| 246 | 2440.4266.4269.4594 | Metselwerk begane grond fase 1 | 4d | 2016-09-23 | 2016-09-28 | 245 |  | 38365 | "3 UITVOERINGSTIJDSCHEMA-BLOKKEN.Blok 12 C12 tm C15" |
| 247 | 2440.4266.4269.4598 | Metselwerk begane grond fase 1 | 3d | 2016-09-29 | 2016-10-03 | 246 |  | 38405 | "3 UITVOERINGSTIJDSCHEMA-BLOKKEN.Blok 13 C16 en C17" |
| 248 | 2440.4266.4269.4599 | Metselwerk begane grond fase 1 | 3d | 2016-10-04 | 2016-10-07 | 247 |  | 38415 | "3 UITVOERINGSTIJDSCHEMA-BLOKKEN.Blok 14 C18 en C19" |
| 249 | 2440.4266.4269.4600 | Metselwerk begane grond fase 1 | 3d | 2016-10-10 | 2016-10-12 | 248 |  | 38425 | "3 UITVOERINGSTIJDSCHEMA-BLOKKEN.Blok 15 C20 en C21" |
| 250 | 2440.4266.4269.4945 | Metselwerk begane grond fase 1 | 8d | 2016-10-13 | 2016-10-24 | 249 |  | 50465 | "3 UITVOERINGSTIJDSCHEMA-BLOKKEN.Blok 16 C22 tm C29" |
| 251 | 2440.4266.4269.4601 | Metselwerk begane grond fase 2 | 8d | 2016-09-16 | 2016-09-27 |  | start no earlier than 2016-09-16 | 46515 | "3 UITVOERINGSTIJDSCHEMA-BLOKKEN.Blok 10 C01 tm C07" |
| 252 | 2440.4266.4269.4602 | Metselwerk begane grond fase 2 | 4d | 2016-09-28 | 2016-10-03 | 251 |  | 46525 | "3 UITVOERINGSTIJDSCHEMA-BLOKKEN.Blok 11 C08 tm C11" |
| 253 | 2440.4266.4269.4603 | Metselwerk begane grond fase 2 | 4d | 2016-10-04 | 2016-10-10 | 252 |  | 46535 | "3 UITVOERINGSTIJDSCHEMA-BLOKKEN.Blok 12 C12 tm C15" |
| 254 | 2440.4266.4269.4607 | Metselwerk begane grond fase 2 | 3d | 2016-10-11 | 2016-10-13 | 253 |  | 46575 | "3 UITVOERINGSTIJDSCHEMA-BLOKKEN.Blok 13 C16 en C17" |
| 255 | 2440.4266.4269.4608 | Metselwerk begane grond fase 2 | 3d | 2016-10-14 | 2016-10-18 | 254 |  | 46585 | "3 UITVOERINGSTIJDSCHEMA-BLOKKEN.Blok 14 C18 en C19" |
| 256 | 2440.4266.4269.4609 | Metselwerk begane grond fase 2 | 3d | 2016-10-19 | 2016-10-21 | 255 |  | 46595 | "3 UITVOERINGSTIJDSCHEMA-BLOKKEN.Blok 15 C20 en C21" |
| 257 | 2440.4266.4269.4953 | Metselwerk begane grond fase 2 | 8d | 2016-10-24 | 2016-11-03 | 256 |  | 50475 | "3 UITVOERINGSTIJDSCHEMA-BLOKKEN.Blok 16 C22 tm C29" |
| 258 | 2440.4266.4269.4610 | Metselwerk 1e verdieping fase 3 | 4d | 2016-09-27 | 2016-09-30 |  | start no earlier than 2016-09-27 | 46605 | "3 UITVOERINGSTIJDSCHEMA-BLOKKEN.Blok 10 C01 tm C07" |
| 259 | 2440.4266.4269.4611 | Metselwerk 1e verdieping fase 3 | 4d | 2016-10-04 | 2016-10-10 | 258 |  | 46615 | "3 UITVOERINGSTIJDSCHEMA-BLOKKEN.Blok 11 C08 tm C11" |
| 260 | 2440.4266.4269.4612 | Metselwerk 1e verdieping fase 3 | 4d | 2016-10-11 | 2016-10-14 | 259 |  | 46625 | "3 UITVOERINGSTIJDSCHEMA-BLOKKEN.Blok 12 C12 tm C15" |
| 261 | 2440.4266.4269.4616 | Metselwerk 1e verdieping fase 3 | 3d | 2016-10-17 | 2016-10-19 | 260 |  | 46665 | "3 UITVOERINGSTIJDSCHEMA-BLOKKEN.Blok 13 C16 en C17" |
| 262 | 2440.4266.4269.4617 | Metselwerk 1e verdieping fase 3 | 3d | 2016-10-20 | 2016-10-24 | 261 |  | 46675 | "3 UITVOERINGSTIJDSCHEMA-BLOKKEN.Blok 14 C18 en C19" |
| 263 | 2440.4266.4269.4618 | Metselwerk 1e verdieping fase 3 | 3d | 2016-10-25 | 2016-10-27 | 262 |  | 46685 | "3 UITVOERINGSTIJDSCHEMA-BLOKKEN.Blok 15 C20 en C21" |
| 264 | 2440.4266.4269.4954 | Metselwerk 1e verdieping fase 3 | 4d | 2016-10-31 | 2016-11-04 | 263 |  | 50485 | "3 UITVOERINGSTIJDSCHEMA-BLOKKEN.Blok 16 C22 tm C29" |
| 265 | 2440.4266.4269.4619 | Metselwerk 1e verdieping fase 4 | 4d | 2016-10-06 | 2016-10-11 |  | start no earlier than 2016-10-06 | 46695 | "3 UITVOERINGSTIJDSCHEMA-BLOKKEN.Blok 10 C01 tm C07" |
| 266 | 2440.4266.4269.4620 | Metselwerk 1e verdieping fase 4 | 4d | 2016-10-12 | 2016-10-17 | 265 |  | 46705 | "3 UITVOERINGSTIJDSCHEMA-BLOKKEN.Blok 11 C08 tm C11" |
| 267 | 2440.4266.4269.4621 | Metselwerk 1e verdieping fase 4 | 4d | 2016-10-18 | 2016-10-21 | 266 |  | 46715 | "3 UITVOERINGSTIJDSCHEMA-BLOKKEN.Blok 12 C12 tm C15" |
| 268 | 2440.4266.4269.4625 | Metselwerk 1e verdieping fase 4 | 3d | 2016-10-24 | 2016-10-26 | 267 |  | 46755 | "3 UITVOERINGSTIJDSCHEMA-BLOKKEN.Blok 13 C16 en C17" |
| 269 | 2440.4266.4269.4626 | Metselwerk 1e verdieping fase 4 | 3d | 2016-10-27 | 2016-10-31 | 268 |  | 46765 | "3 UITVOERINGSTIJDSCHEMA-BLOKKEN.Blok 14 C18 en C19" |
| 270 | 2440.4266.4269.4627 | Metselwerk 1e verdieping fase 4 | 3d | 2016-11-01 | 2016-11-04 | 269 |  | 46775 | "3 UITVOERINGSTIJDSCHEMA-BLOKKEN.Blok 15 C20 en C21" |
| 271 | 2440.4266.4269.4962 | Metselwerk 1e verdieping fase 4 | 4d | 2016-11-07 | 2016-11-10 | 270 |  | 50495 | "3 UITVOERINGSTIJDSCHEMA-BLOKKEN.Blok 16 C22 tm C29" |
| 272 | 2440.4266.4269.4628 | Steiger opbouwen toppen | 2d | 2016-10-17 | 2016-10-18 |  | start no earlier than 2016-10-17 | 38895 | "3 UITVOERINGSTIJDSCHEMA-BLOKKEN.Blok 11 C08 tm C11" |
| 273 | 2440.4266.4269.4629 | Steiger opbouwen toppen | 2d | 2016-10-21 | 2016-10-24 | 272 |  | 38905 | "3 UITVOERINGSTIJDSCHEMA-BLOKKEN.Blok 12 C12 tm C15" |
| 274 | 2440.4266.4269.4633 | Steiger opbouwen toppen | 2d | 2016-10-26 | 2016-10-27 | 273 |  | 38945 | "3 UITVOERINGSTIJDSCHEMA-BLOKKEN.Blok 13 C16 en C17" |
| 275 | 2440.4266.4269.4634 | Steiger opbouwen toppen | 2d | 2016-10-31 | 2016-11-01 | 274 |  | 38955 | "3 UITVOERINGSTIJDSCHEMA-BLOKKEN.Blok 14 C18 en C19" |
| 276 | 2440.4266.4269.4635 | Steiger opbouwen toppen | 2d | 2016-11-04 | 2016-11-07 | 275 |  | 38965 | "3 UITVOERINGSTIJDSCHEMA-BLOKKEN.Blok 15 C20 en C21" |
| 277 | 2440.4266.4269.4990 | Steiger opbouwen toppen | 2d | 2016-11-10 | 2016-11-11 | 276 |  | 50565 | "3 UITVOERINGSTIJDSCHEMA-BLOKKEN.Blok 16 C22 tm C29" |
| 278 | 2440.4266.4269.4636 | Metselwerk fase 5 | 3d | 2016-10-19 | 2016-10-21 |  | start no earlier than 2016-10-19 | 38985 | "3 UITVOERINGSTIJDSCHEMA-BLOKKEN.Blok 11 C08 tm C11" |
| 279 | 2440.4266.4269.4637 | Metselwerk fase 5 | 3d | 2016-10-25 | 2016-10-27 | 278 |  | 38995 | "3 UITVOERINGSTIJDSCHEMA-BLOKKEN.Blok 12 C12 tm C15" |

| ID | WBS | Task | Duration | Start | Finish | Predecessors | Constraint | Unique_Task_ID | CodeLibrary:"Legenda" |
| --- | --- | --- | --- | --- | --- | --- | --- | --- | --- |
| 280 | 2440.4266.4269.4641 | Metselwerk fase 5 | 3d | 2016-10-28 | 2016-11-01 | 279 |  | 46805 | "3 UITVOERINGSTIJDSCHEMA-BLOKKEN.Blok 13 C16 en C17" |
| 281 | 2440.4266.4269.4642 | Metselwerk fase 5 | 3d | 2016-11-03 | 2016-11-07 | 280 |  | 46815 | "3 UITVOERINGSTIJDSCHEMA-BLOKKEN.Blok 14 C18 en C19" |
| 282 | 2440.4266.4269.4643 | Metselwerk fase 5 | 3d | 2016-11-08 | 2016-11-10 | 281 |  | 46825 | "3 UITVOERINGSTIJDSCHEMA-BLOKKEN.Blok 15 C20 en C21" |
| 283 | 2440.4266.4269.4998 | Metselwerk fase 5 | 3d | 2016-11-14 | 2016-11-16 | 282 |  | 50575 | "3 UITVOERINGSTIJDSCHEMA-BLOKKEN.Blok 16 C22 tm C29" |
| 284 | 2440.4266.4269.4644 | Metselwerk fase 6 | 2d | 2016-10-24 | 2016-10-25 |  | start no earlier than 2016-10-24 | 46265 | "3 UITVOERINGSTIJDSCHEMA-BLOKKEN.Blok 11 C08 tm C11" |
| 285 | 2440.4266.4269.4645 | Metselwerk fase 6 | 2d | 2016-10-28 | 2016-10-31 | 284 |  | 46275 | "3 UITVOERINGSTIJDSCHEMA-BLOKKEN.Blok 12 C12 tm C15" |
| 286 | 2440.4266.4269.4649 | Metselwerk fase 6 | 2d | 2016-11-03 | 2016-11-04 | 285 |  | 46865 | "3 UITVOERINGSTIJDSCHEMA-BLOKKEN.Blok 13 C16 en C17" |
| 287 | 2440.4266.4269.4650 | Metselwerk fase 6 | 2d | 2016-11-08 | 2016-11-09 | 286 |  | 46875 | "3 UITVOERINGSTIJDSCHEMA-BLOKKEN.Blok 14 C18 en C19" |
| 288 | 2440.4266.4269.4651 | Metselwerk fase 6 | 2d | 2016-11-11 | 2016-11-14 | 287 |  | 46885 | "3 UITVOERINGSTIJDSCHEMA-BLOKKEN.Blok 15 C20 en C21" |
| 289 | 2440.4266.4269.4999 | Metselwerk fase 6 | 2d | 2016-11-17 | 2016-11-18 | 288 |  | 50585 | "3 UITVOERINGSTIJDSCHEMA-BLOKKEN.Blok 16 C22 tm C29" |
| 290 | 2440.4266.4269.4652 | Metselwerk garages Blok 13+14+15 | 1d | 2016-12-06 | 2016-12-06 |  | start no earlier than 2016-12-06 | 49925 | "3 UITVOERINGSTIJDSCHEMA-BLOKKEN.Blok 13 C16 en C17" |
| 291 | 2440.4266.4269.4653 | Metselwerk garages Blok 13+14+15 | 1d | 2016-12-12 | 2016-12-12 | 290 |  | 49935 | "3 UITVOERINGSTIJDSCHEMA-BLOKKEN.Blok 14 C18 en C19" |
| 292 | 2440.4266.4269.4654 | Metselwerk garages Blok 13+14+15 | 1d | 2016-12-19 | 2016-12-19 | 291 |  | 49945 | "3 UITVOERINGSTIJDSCHEMA-BLOKKEN.Blok 15 C20 en C21" |
| 293 | 2440.4266.4269.4655 | Metselwerk garages Blok 13+14+15 | 4d | 2016-12-08 | 2016-12-13 |  | start no earlier than 2016-12-08 | 49955 | "3 UITVOERINGSTIJDSCHEMA-BLOKKEN.Blok 13 C16 en C17" |
| 294 | 2440.4266.4269.4656 | Metselwerk garages Blok 13+14+15 | 4d | 2016-12-15 | 2016-12-20 | 293 |  | 49965 | "3 UITVOERINGSTIJDSCHEMA-BLOKKEN.Blok 14 C18 en C19" |
| 295 | 2440.4266.4269.4657 | Metselwerk garages Blok 13+14+15 | 4d | 2016-12-22 | 2017-01-10 | 294 |  | 49975 | "3 UITVOERINGSTIJDSCHEMA-BLOKKEN.Blok 15 C20 en C21" |
| 296 | 2440.4266.4269.4658 | Houten balklagen garages compleet Blok 13+14+15 | 4d | 2016-12-12 | 2016-12-16 |  | start no earlier than 2016-12-12 | 46395 | "3 UITVOERINGSTIJDSCHEMA-BLOKKEN.Blok 13 C16 en C17" |
| 297 | 2440.4266.4269.4659 | Houten balklagen garages compleet Blok 13+14+15 | 4d | 2016-12-19 | 2016-12-23 | 296 |  | 46405 | "3 UITVOERINGSTIJDSCHEMA-BLOKKEN.Blok 14 C18 en C19" |
| 298 | 2440.4266.4269.4660 | Houten balklagen garages compleet Blok 13+14+15 | 4d | 2017-01-09 | 2017-01-13 | 297 |  | 46415 | "3 UITVOERINGSTIJDSCHEMA-BLOKKEN.Blok 15 C20 en C21" |
| 300 | 2440.4266.4270 | **Kappen** | 560h | 2016-09-08 | 2016-12-20 |  | start no earlier than 2016-09-08 | 30477 | "3 UITVOERINGSTIJDSCHEMA-BLOKKEN.Blok 10 C01 tm C07" |
| 301 | 2440.4266.4270.4661 | Nooddakbedekking aanbouwen | 2d | 2016-09-08 | 2016-09-09 |  | start no earlier than 2016-09-08 | 30575 | "3 UITVOERINGSTIJDSCHEMA-BLOKKEN.Blok 10 C01 tm C07" |
| 302 | 2440.4266.4270.4662 | Nooddakbedekking aanbouwen | 2d | 2016-09-14 | 2016-09-15 | 301 |  | 39155 | "3 UITVOERINGSTIJDSCHEMA-BLOKKEN.Blok 11 C08 tm C11" |
| 303 | 2440.4266.4270.4663 | Nooddakbedekking aanbouwen | 2d | 2016-09-20 | 2016-09-21 | 302 |  | 39165 | "3 UITVOERINGSTIJDSCHEMA-BLOKKEN.Blok 12 C12 tm C15" |
| 304 | 2440.4266.4270.4667 | Nooddakbedekking aanbouwen | 2d | 2016-10-03 | 2016-10-04 | 303 |  | 39205 | "3 UITVOERINGSTIJDSCHEMA-BLOKKEN.Blok 13 C16 en C17" |
| 305 | 2440.4266.4270.4668 | Nooddakbedekking aanbouwen | 2d | 2016-10-07 | 2016-10-10 | 304 |  | 39215 | "3 UITVOERINGSTIJDSCHEMA-BLOKKEN.Blok 14 C18 en C19" |
| 306 | 2440.4266.4270.4669 | Nooddakbedekking aanbouwen | 2d | 2016-10-12 | 2016-10-13 | 305 |  | 39225 | "3 UITVOERINGSTIJDSCHEMA-BLOKKEN.Blok 15 C20 en C21" |
| 307 | 2440.4266.4270.5007 | Nooddakbedekking aanbouwen | 2d | 2016-10-17 | 2016-10-18 | 306 |  | 50595 | "3 UITVOERINGSTIJDSCHEMA-BLOKKEN.Blok 16 C22 tm C29" |
| 308 | 2440.4266.4270.4670 | Voorbereiding kap | 4d | 2016-09-14 | 2016-09-19 |  | start no earlier than 2016-09-14 | 30655 | "3 UITVOERINGSTIJDSCHEMA-BLOKKEN.Blok 10 C01 tm C07" |
| 309 | 2440.4266.4270.4286 | Voorbereiding kap | 3d | 2016-09-22 | 2016-09-26 | 308 |  | 39425 | "3 UITVOERINGSTIJDSCHEMA-BLOKKEN.Blok 11 C08 tm C11" |
| 310 | 2440.4266.4270.4671 | Voorbereiding kap | 3d | 2016-09-28 | 2016-09-30 | 309 |  | 30487 | "3 UITVOERINGSTIJDSCHEMA-BLOKKEN.Blok 12 C12 tm C15" |
| 311 | 2440.4266.4270.4675 | Voorbereiding kap | 2d | 2016-10-06 | 2016-10-07 | 310 |  | 39465 | "3 UITVOERINGSTIJDSCHEMA-BLOKKEN.Blok 13 C16 en C17" |
| 312 | 2440.4266.4270.4676 | Voorbereiding kap | 2d | 2016-10-11 | 2016-10-12 | 311 |  | 39475 | "3 UITVOERINGSTIJDSCHEMA-BLOKKEN.Blok 14 C18 en C19" |
| 313 | 2440.4266.4270.4677 | Voorbereiding kap | 2d | 2016-10-14 | 2016-10-17 | 312 |  | 39485 | "3 UITVOERINGSTIJDSCHEMA-BLOKKEN.Blok 15 C20 en C21" |
| 314 | 2440.4266.4270.5008 | Voorbereiding kap | 4d | 2016-10-18 | 2016-10-21 | 313 |  | 50605 | "3 UITVOERINGSTIJDSCHEMA-BLOKKEN.Blok 16 C22 tm C29" |
| 315 | 2440.4266.4270.4678 | Houten kolommen en luifelconstructie Blok 10 | 7d | 2016-09-09 | 2016-09-19 |  | start no earlier than 2016-09-09 | 46425 | "3 UITVOERINGSTIJDSCHEMA-BLOKKEN.Blok 10 C01 tm C07" |
| 316 | 2440.4266.4270.4679 | Houten kolommen en luifelconstructie Blok 10 | 7d | 2016-09-23 | 2016-10-03 | 315 |  | 46435 | "3 UITVOERINGSTIJDSCHEMA-BLOKKEN.Blok 10 C01 tm C07" |
| 317 | 2440.4266.4270.4680 | Prefab dakplaten leggen | 4d | 2016-09-20 | 2016-09-23 |  | start no earlier than 2016-09-20 | 30846 | "3 UITVOERINGSTIJDSCHEMA-BLOKKEN.Blok 10 C01 tm C07" |
| 318 | 2440.4266.4270.4681 | Prefab dakplaten leggen | 3d | 2016-09-26 | 2016-09-28 | 238SS+2d, 317 |  | 39495 | "3 UITVOERINGSTIJDSCHEMA-BLOKKEN.Blok 11 C08 tm C11" |
| 319 | 2440.4266.4270.4682 | Prefab dakplaten leggen | 3d | 2016-09-30 | 2016-10-04 | 318 |  | 39505 | "3 UITVOERINGSTIJDSCHEMA-BLOKKEN.Blok 12 C12 tm C15" |
| 320 | 2440.4266.4270.4686 | Prefab dakplaten leggen | 1d | 2016-10-10 | 2016-10-10 | 319 |  | 39545 | "3 UITVOERINGSTIJDSCHEMA-BLOKKEN.Blok 13 C16 en C17" |
| 321 | 2440.4266.4270.4687 | Prefab dakplaten leggen | 1d | 2016-10-13 | 2016-10-13 | 320 |  | 39555 | "3 UITVOERINGSTIJDSCHEMA-BLOKKEN.Blok 14 C18 en C19" |
| 322 | 2440.4266.4270.4688 | Prefab dakplaten leggen | 1d | 2016-10-18 | 2016-10-18 | 321 |  | 39565 | "3 UITVOERINGSTIJDSCHEMA-BLOKKEN.Blok 15 C20 en C21" |
| 323 | 2440.4266.4270.5016 | Prefab dakplaten leggen | 4d | 2016-10-19 | 2016-10-24 | 322 |  | 50615 | "3 UITVOERINGSTIJDSCHEMA-BLOKKEN.Blok 16 C22 tm C29" |
| 324 | 2440.4266.4270.4689 | Monteren dakramen en dakkapellen | 4d | 2016-09-21 | 2016-09-26 |  | start no earlier than 2016-09-21 | 46895 | "3 UITVOERINGSTIJDSCHEMA-BLOKKEN.Blok 10 C01 tm C07" |
| 325 | 2440.4266.4270.4690 | Monteren dakramen en dakkapellen | 3d | 2016-09-27 | 2016-09-29 | 324 |  | 46905 | "3 UITVOERINGSTIJDSCHEMA-BLOKKEN.Blok 11 C08 tm C11" |
| 326 | 2440.4266.4270.4691 | Monteren dakramen en dakkapellen | 3d | 2016-10-03 | 2016-10-06 | 325 |  | 46915 | "3 UITVOERINGSTIJDSCHEMA-BLOKKEN.Blok 12 C12 tm C15" |
| 327 | 2440.4266.4270.4695 | Monteren dakramen en dakkapellen | 1d | 2016-10-11 | 2016-10-11 | 326 |  | 46955 | "3 UITVOERINGSTIJDSCHEMA-BLOKKEN.Blok 13 C16 en C17" |
| 328 | 2440.4266.4270.4696 | Monteren dakramen en dakkapellen | 1d | 2016-10-14 | 2016-10-14 | 327 |  | 46965 | "3 UITVOERINGSTIJDSCHEMA-BLOKKEN.Blok 14 C18 en C19" |
| 329 | 2440.4266.4270.4697 | Monteren dakramen en dakkapellen | 1d | 2016-10-19 | 2016-10-19 | 328 |  | 46975 | "3 UITVOERINGSTIJDSCHEMA-BLOKKEN.Blok 15 C20 en C21" |
| 330 | 2440.4266.4270.5017 | Monteren dakramen en dakkapellen | 4d | 2016-10-20 | 2016-10-25 | 329 |  | 50625 | "3 UITVOERINGSTIJDSCHEMA-BLOKKEN.Blok 16 C22 tm C29" |
| 331 | 2440.4266.4270.4698 | Prefab schoorstenen monteren | 1d | 2016-09-23 | 2016-09-23 |  | start no earlier than 2016-09-23 | 39755 | "3 UITVOERINGSTIJDSCHEMA-BLOKKEN.Blok 10 C01 tm C07" |
| 332 | 2440.4266.4270.4699 | Prefab schoorstenen monteren | 1d | 2016-09-30 | 2016-09-30 | 331 |  | 39765 | "3 UITVOERINGSTIJDSCHEMA-BLOKKEN.Blok 11 C08 tm C11" |
| 333 | 2440.4266.4270.4700 | Prefab schoorstenen monteren | 1d | 2016-10-07 | 2016-10-07 | 332 |  | 39775 | "3 UITVOERINGSTIJDSCHEMA-BLOKKEN.Blok 12 C12 tm C15" |
| 334 | 2440.4266.4270.4704 | Prefab schoorstenen monteren | 1d | 2016-10-13 | 2016-10-13 | 333 |  | 39815 | "3 UITVOERINGSTIJDSCHEMA-BLOKKEN.Blok 13 C16 en C17" |
| 335 | 2440.4266.4270.4705 | Prefab schoorstenen monteren | 1d | 2016-10-18 | 2016-10-18 | 334 |  | 39825 | "3 UITVOERINGSTIJDSCHEMA-BLOKKEN.Blok 14 C18 en C19" |
| 336 | 2440.4266.4270.4706 | Prefab schoorstenen monteren | 1d | 2016-10-21 | 2016-10-21 | 335 |  | 39835 | "3 UITVOERINGSTIJDSCHEMA-BLOKKEN.Blok 15 C20 en C21" |
| 337 | 2440.4266.4270.5025 | Prefab schoorstenen monteren | 1d | 2016-10-25 | 2016-10-25 | 336 |  | 50635 | "3 UITVOERINGSTIJDSCHEMA-BLOKKEN.Blok 16 C22 tm C29" |
| 338 | 2440.4266.4270.4707 | Zinken goten monteren | 3d | 2016-09-26 | 2016-09-28 |  | start no earlier than 2016-09-26 | 39845 | "3 UITVOERINGSTIJDSCHEMA-BLOKKEN.Blok 10 C01 tm C07" |
| 339 | 2440.4266.4270.4708 | Zinken goten monteren | 2d | 2016-10-03 | 2016-10-04 | 338 |  | 39855 | "3 UITVOERINGSTIJDSCHEMA-BLOKKEN.Blok 11 C08 tm C11" |
| 340 | 2440.4266.4270.4709 | Zinken goten monteren | 2d | 2016-10-10 | 2016-10-11 | 339 |  | 39865 | "3 UITVOERINGSTIJDSCHEMA-BLOKKEN.Blok 12 C12 tm C15" |
| 341 | 2440.4266.4270.4713 | Zinken goten monteren | 2d | 2016-10-14 | 2016-10-17 | 340 |  | 39905 | "3 UITVOERINGSTIJDSCHEMA-BLOKKEN.Blok 13 C16 en C17" |
| 342 | 2440.4266.4270.4714 | Zinken goten monteren | 2d | 2016-10-19 | 2016-10-20 | 341 |  | 39915 | "3 UITVOERINGSTIJDSCHEMA-BLOKKEN.Blok 14 C18 en C19" |
| 343 | 2440.4266.4270.4715 | Zinken goten monteren | 2d | 2016-10-24 | 2016-10-25 | 342 |  | 39925 | "3 UITVOERINGSTIJDSCHEMA-BLOKKEN.Blok 15 C20 en C21" |
| 344 | 2440.4266.4270.5026 | Zinken goten monteren | 3d | 2016-10-26 | 2016-10-28 | 343 |  | 50645 | "3 UITVOERINGSTIJDSCHEMA-BLOKKEN.Blok 16 C22 tm C29" |
| 345 | 2440.4266.4270.4716 | Verholen goten monteren | 2d | 2016-09-28 | 2016-09-29 |  | start no earlier than 2016-09-28 | 39935 | "3 UITVOERINGSTIJDSCHEMA-BLOKKEN.Blok 10 C01 tm C07" |
| 346 | 2440.4266.4270.4717 | Verholen goten monteren | 2d | 2016-10-04 | 2016-10-06 | 345 |  | 39945 | "3 UITVOERINGSTIJDSCHEMA-BLOKKEN.Blok 11 C08 tm C11" |
| 347 | 2440.4266.4270.4718 | Verholen goten monteren | 2d | 2016-10-11 | 2016-10-12 | 346 |  | 39955 | "3 UITVOERINGSTIJDSCHEMA-BLOKKEN.Blok 12 C12 tm C15" |
| 348 | 2440.4266.4270.5061 | Verholen goten monteren | 2d | 2016-10-17 | 2016-10-18 | 347 |  | 50715 | "3 UITVOERINGSTIJDSCHEMA-BLOKKEN.Blok 13 C16 en C17" |
| 349 | 2440.4266.4270.5053 | Verholen goten monteren | 2d | 2016-10-20 | 2016-10-21 | 348 |  | 50705 | "3 UITVOERINGSTIJDSCHEMA-BLOKKEN.Blok 14 C18 en C19" |
| 350 | 2440.4266.4270.4722 | Verholen goten monteren | 2d | 2016-10-25 | 2016-10-26 | 349 |  | 40015 | "3 UITVOERINGSTIJDSCHEMA-BLOKKEN.Blok 15 C20 en C21" |

| ID | WBS | Task | Duration | Start | Finish | Predecessors | Constraint | Unique_Task_ID | CodeLibrary:"Legenda" |
| --- | --- | --- | --- | --- | --- | --- | --- | --- | --- |
| 351 | 2440.4266.4270.5034 | Verholen goten monteren | 2d | 2016-10-28 | 2016-10-31 | 350 |  | 50655 | "3 UITVOERINGSTIJDSCHEMA-BLOKKEN.Blok 16 C22 tm C29" |
| 352 | 2440.4266.4270.4287 | Dakpannen + Doorvoeren aanbrengen | 7d | 2016-09-29 | 2016-10-10 |  | start no earlier than 2016-09-29 | 40035 | "3 UITVOERINGSTIJDSCHEMA-BLOKKEN.Blok 10 C01 tm C07" |
| 353 | 2440.4266.4270.4723 | Dakpannen + Doorvoeren aanbrengen | 4d | 2016-10-11 | 2016-10-14 | 352 |  | 40045 | "3 UITVOERINGSTIJDSCHEMA-BLOKKEN.Blok 11 C08 tm C11" |
| 354 | 2440.4266.4270.4724 | Dakpannen + Doorvoeren aanbrengen | 4d | 2016-10-17 | 2016-10-20 | 353 |  | 40055 | "3 UITVOERINGSTIJDSCHEMA-BLOKKEN.Blok 12 C12 tm C15" |
| 355 | 2440.4266.4270.4728 | Dakpannen + Doorvoeren aanbrengen | 2d | 2016-10-21 | 2016-10-24 | 354 |  | 40085 | "3 UITVOERINGSTIJDSCHEMA-BLOKKEN.Blok 13 C16 en C17" |
| 356 | 2440.4266.4270.4729 | Dakpannen + Doorvoeren aanbrengen | 2d | 2016-10-25 | 2016-10-26 | 355 |  | 40095 | "3 UITVOERINGSTIJDSCHEMA-BLOKKEN.Blok 14 C18 en C19" |
| 357 | 2440.4266.4270.4730 | Dakpannen + Doorvoeren aanbrengen | 2d | 2016-10-27 | 2016-10-28 | 356 |  | 40105 | "3 UITVOERINGSTIJDSCHEMA-BLOKKEN.Blok 15 C20 en C21" |
| 358 | 2440.4266.4270.5035 | Dakpannen + Doorvoeren aanbrengen | 8d | 2016-10-31 | 2016-11-10 | 357 |  | 50665 | "3 UITVOERINGSTIJDSCHEMA-BLOKKEN.Blok 16 C22 tm C29" |
| 359 | 2440.4266.4270.4731 | Zonnepanelen leggen en monteren | 7d | 2016-10-03 | 2016-10-12 |  | start no earlier than 2016-10-03 | 40135 | "3 UITVOERINGSTIJDSCHEMA-BLOKKEN.Blok 10 C01 tm C07" |
| 360 | 2440.4266.4270.4732 | Zonnepanelen leggen en monteren | 4d | 2016-10-13 | 2016-10-18 | 359 |  | 40145 | "3 UITVOERINGSTIJDSCHEMA-BLOKKEN.Blok 11 C08 tm C11" |
| 361 | 2440.4266.4270.4733 | Zonnepanelen leggen en monteren | 4d | 2016-10-19 | 2016-10-24 | 360 |  | 40155 | "3 UITVOERINGSTIJDSCHEMA-BLOKKEN.Blok 12 C12 tm C15" |
| 362 | 2440.4266.4270.4737 | Zonnepanelen leggen en monteren | 2d | 2016-10-25 | 2016-10-26 | 361 |  | 40195 | "3 UITVOERINGSTIJDSCHEMA-BLOKKEN.Blok 13 C16 en C17" |
| 363 | 2440.4266.4270.4738 | Zonnepanelen leggen en monteren | 2d | 2016-10-27 | 2016-10-28 | 362 |  | 40205 | "3 UITVOERINGSTIJDSCHEMA-BLOKKEN.Blok 14 C18 en C19" |
| 364 | 2440.4266.4270.4739 | Zonnepanelen leggen en monteren | 2d | 2016-10-31 | 2016-11-01 | 363 |  | 40215 | "3 UITVOERINGSTIJDSCHEMA-BLOKKEN.Blok 15 C20 en C21" |
| 365 | 2440.4266.4270.5043 | Zonnepanelen leggen en monteren | 8d | 2016-11-03 | 2016-11-14 | 364 |  | 50675 | "3 UITVOERINGSTIJDSCHEMA-BLOKKEN.Blok 16 C22 tm C29" |
| 366 | 2440.4266.4270.4740 | Platte daken aanbouwen (isolatie en bitumen) | 4d | 2016-10-31 | 2016-11-04 |  | start no earlier than 2016-10-31 | 40495 | "3 UITVOERINGSTIJDSCHEMA-BLOKKEN.Blok 10 C01 tm C07" |
| 367 | 2440.4266.4270.4741 | Platte daken aanbouwen (isolatie en bitumen) | 4d | 2016-11-10 | 2016-11-15 | 366 |  | 40505 | "3 UITVOERINGSTIJDSCHEMA-BLOKKEN.Blok 11 C08 tm C11" |
| 368 | 2440.4266.4270.4742 | Platte daken aanbouwen (isolatie en bitumen) | 4d | 2016-11-16 | 2016-11-21 | 367 |  | 40515 | "3 UITVOERINGSTIJDSCHEMA-BLOKKEN.Blok 12 C12 tm C15" |
| 369 | 2440.4266.4270.4746 | Platte daken aanbouwen (isolatie en bitumen) | 3d | 2016-11-22 | 2016-11-24 | 368 |  | 40555 | "3 UITVOERINGSTIJDSCHEMA-BLOKKEN.Blok 13 C16 en C17" |
| 370 | 2440.4266.4270.4747 | Platte daken aanbouwen (isolatie en bitumen) | 3d | 2016-11-25 | 2016-11-29 | 369 |  | 40565 | "3 UITVOERINGSTIJDSCHEMA-BLOKKEN.Blok 14 C18 en C19" |
| 371 | 2440.4266.4270.4748 | Platte daken aanbouwen (isolatie en bitumen) | 3d | 2016-11-30 | 2016-12-02 | 370 |  | 40575 | "3 UITVOERINGSTIJDSCHEMA-BLOKKEN.Blok 15 C20 en C21" |
| 372 | 2440.4266.4270.5044 | Platte daken aanbouwen (isolatie en bitumen) | 4d | 2016-12-05 | 2016-12-09 | 371 |  | 50685 | "3 UITVOERINGSTIJDSCHEMA-BLOKKEN.Blok 16 C22 tm C29" |
| 373 | 2440.4266.4270.4749 | Platdakrandafwerking/ daktrimmen | 4d | 2016-11-03 | 2016-11-08 |  | start no earlier than 2016-11-03 | 49985 | "3 UITVOERINGSTIJDSCHEMA-BLOKKEN.Blok 10 C01 tm C07" |
| 374 | 2440.4266.4270.4750 | Platdakrandafwerking/ daktrimmen | 4d | 2016-11-14 | 2016-11-17 | 373 |  | 49995 | "3 UITVOERINGSTIJDSCHEMA-BLOKKEN.Blok 11 C08 tm C11" |
| 375 | 2440.4266.4270.4751 | Platdakrandafwerking/ daktrimmen | 4d | 2016-11-18 | 2016-11-23 | 374 |  | 50005 | "3 UITVOERINGSTIJDSCHEMA-BLOKKEN.Blok 12 C12 tm C15" |
| 376 | 2440.4266.4270.4755 | Platdakrandafwerking/ daktrimmen | 2d | 2016-11-24 | 2016-11-25 | 375 |  | 50045 | "3 UITVOERINGSTIJDSCHEMA-BLOKKEN.Blok 13 C16 en C17" |
| 377 | 2440.4266.4270.4756 | Platdakrandafwerking/ daktrimmen | 2d | 2016-11-29 | 2016-11-30 | 376 |  | 50055 | "3 UITVOERINGSTIJDSCHEMA-BLOKKEN.Blok 14 C18 en C19" |
| 378 | 2440.4266.4270.4757 | Platdakrandafwerking/ daktrimmen | 2d | 2016-12-02 | 2016-12-05 | 377 |  | 50065 | "3 UITVOERINGSTIJDSCHEMA-BLOKKEN.Blok 15 C20 en C21" |
| 379 | 2440.4266.4270.5052 | Platdakrandafwerking/ daktrimmen | 4d | 2016-12-08 | 2016-12-13 | 378 |  | 50695 | "3 UITVOERINGSTIJDSCHEMA-BLOKKEN.Blok 16 C22 tm C29" |
| 380 | 2440.4266.4270.4758 | Platte daken garages Blok 13+14+15 | 4d | 2016-12-01 | 2016-12-06 |  | start no earlier than 2016-12-01 | 40635 | "3 UITVOERINGSTIJDSCHEMA-BLOKKEN.Blok 13 C16 en C17" |
| 381 | 2440.4266.4270.4759 | Platte daken garages Blok 13+14+15 | 4d | 2016-12-08 | 2016-12-13 | 380 |  | 40645 | "3 UITVOERINGSTIJDSCHEMA-BLOKKEN.Blok 14 C18 en C19" |
| 382 | 2440.4266.4270.4760 | Platte daken garages Blok 13+14+15 | 4d | 2016-12-15 | 2016-12-20 | 381 |  | 40655 | "3 UITVOERINGSTIJDSCHEMA-BLOKKEN.Blok 15 C20 en C21" |

| ID | WBS | Task | Duration | Start | Finish | Predecessors | Constraint | Unique_Task_ID | CodeLibrary:"Legenda" |
| --- | --- | --- | --- | --- | --- | --- | --- | --- | --- |
| 384 | 2440.4266.4276 | **Gevelsluiting** | 304h | 2016-10-12 | 2016-12-05 |  | start no earlier than 2016-10-12 | 34226 | "3 UITVOERINGSTIJDSCHEMA-BLOKKEN.Blok 10 C01 tm C07" |
| 385 | 2440.4266.4276.4761 | Prefab beton raamdorpels aanbrengen | 2d | 2016-10-13 | 2016-10-14 |  | start no earlier than 2016-10-13 | 40665 | "3 UITVOERINGSTIJDSCHEMA-BLOKKEN.Blok 10 C01 tm C07" |
| 386 | 2440.4266.4276.4762 | Prefab beton raamdorpels aanbrengen | 4d | 2016-10-21 | 2016-10-26 | 385 |  | 40675 | "3 UITVOERINGSTIJDSCHEMA-BLOKKEN.Blok 11 C08 tm C11" |
| 387 | 2440.4266.4276.4763 | Prefab beton raamdorpels aanbrengen | 4d | 2016-10-27 | 2016-11-01 | 386 |  | 40685 | "3 UITVOERINGSTIJDSCHEMA-BLOKKEN.Blok 12 C12 tm C15" |
| 388 | 2440.4266.4276.4767 | Prefab beton raamdorpels aanbrengen | 2d | 2016-11-03 | 2016-11-04 | 387 |  | 40725 | "3 UITVOERINGSTIJDSCHEMA-BLOKKEN.Blok 13 C16 en C17" |
| 389 | 2440.4266.4276.4768 | Prefab beton raamdorpels aanbrengen | 2d | 2016-11-07 | 2016-11-08 | 388 |  | 40735 | "3 UITVOERINGSTIJDSCHEMA-BLOKKEN.Blok 14 C18 en C19" |
| 390 | 2440.4266.4276.4769 | Prefab beton raamdorpels aanbrengen | 2d | 2016-11-09 | 2016-11-10 | 389 |  | 40745 | "3 UITVOERINGSTIJDSCHEMA-BLOKKEN.Blok 15 C20 en C21" |
| 391 | 2440.4266.4276.5062 | Prefab beton raamdorpels aanbrengen | 4d | 2016-11-11 | 2016-11-16 | 390 |  | 50725 | "3 UITVOERINGSTIJDSCHEMA-BLOKKEN.Blok 16 C22 tm C29" |
| 392 | 2440.4266.4276.4770 | Voegwerk | 7d | 2016-10-12 | 2016-10-20 |  | start no earlier than 2016-10-12 | 34236 | "3 UITVOERINGSTIJDSCHEMA-BLOKKEN.Blok 10 C01 tm C07" |
| 393 | 2440.4266.4276.4771 | Voegwerk | 4d | 2016-10-21 | 2016-10-26 | 392 |  | 40755 | "3 UITVOERINGSTIJDSCHEMA-BLOKKEN.Blok 11 C08 tm C11" |
| 394 | 2440.4266.4276.4772 | Voegwerk | 4d | 2016-10-27 | 2016-11-01 | 393 |  | 40765 | "3 UITVOERINGSTIJDSCHEMA-BLOKKEN.Blok 12 C12 tm C15" |
| 395 | 2440.4266.4276.4776 | Voegwerk | 2d | 2016-11-03 | 2016-11-04 | 394 |  | 40805 | "3 UITVOERINGSTIJDSCHEMA-BLOKKEN.Blok 13 C16 en C17" |
| 396 | 2440.4266.4276.4777 | Voegwerk | 2d | 2016-11-07 | 2016-11-08 | 395 |  | 40815 | "3 UITVOERINGSTIJDSCHEMA-BLOKKEN.Blok 14 C18 en C19" |
| 397 | 2440.4266.4276.4778 | Voegwerk | 2d | 2016-11-09 | 2016-11-10 | 396 |  | 40825 | "3 UITVOERINGSTIJDSCHEMA-BLOKKEN.Blok 15 C20 en C21" |
| 398 | 2440.4266.4276.5070 | Voegwerk | 8d | 2016-11-11 | 2016-11-22 | 397 |  | 50735 | "3 UITVOERINGSTIJDSCHEMA-BLOKKEN.Blok 16 C22 tm C29" |
| 399 | 2440.4266.4276.4779 | Aftimmeren overstekken en gootdetail | 6d | 2016-10-18 | 2016-10-25 |  | start no earlier than 2016-10-18 | 49785 | "3 UITVOERINGSTIJDSCHEMA-BLOKKEN.Blok 10 C01 tm C07" |
| 400 | 2440.4266.4276.4780 | Aftimmeren overstekken en gootdetail | 5d | 2016-10-26 | 2016-11-01 | 399 |  | 49795 | "3 UITVOERINGSTIJDSCHEMA-BLOKKEN.Blok 11 C08 tm C11" |
| 401 | 2440.4266.4276.4781 | Aftimmeren overstekken en gootdetail | 5d | 2016-11-03 | 2016-11-09 | 400 |  | 49805 | "3 UITVOERINGSTIJDSCHEMA-BLOKKEN.Blok 12 C12 tm C15" |
| 402 | 2440.4266.4276.4785 | Aftimmeren overstekken en gootdetail | 4d | 2016-11-10 | 2016-11-15 | 401 |  | 49855 | "3 UITVOERINGSTIJDSCHEMA-BLOKKEN.Blok 14 C18 en C19" |
| 403 | 2440.4266.4276.5071 | Aftimmeren overstekken en gootdetail | 7d | 2016-11-16 | 2016-11-24 | 402 |  | 50745 | "3 UITVOERINGSTIJDSCHEMA-BLOKKEN.Blok 16 C22 tm C29" |
| 404 | 2440.4266.4276.4786 | Aftimmeren overstekken en gootdetail | 4d | 2016-11-11 | 2016-11-16 |  | start no earlier than 2016-11-11 | 49845 | "3 UITVOERINGSTIJDSCHEMA-BLOKKEN.Blok 13 C16 en C17" |
| 405 | 2440.4266.4276.4787 | Aftimmeren overstekken en gootdetail | 4d | 2016-11-17 | 2016-11-22 | 404 |  | 49865 | "3 UITVOERINGSTIJDSCHEMA-BLOKKEN.Blok 15 C20 en C21" |
| 406 | 2440.4266.4276.4788 | Buitenschilderwerk | 4d | 2016-10-24 | 2016-10-27 |  | start no earlier than 2016-10-24 | 40925 | "3 UITVOERINGSTIJDSCHEMA-BLOKKEN.Blok 10 C01 tm C07" |
| 407 | 2440.4266.4276.4789 | Buitenschilderwerk | 4d | 2016-10-31 | 2016-11-04 | 406 |  | 40935 | "3 UITVOERINGSTIJDSCHEMA-BLOKKEN.Blok 11 C08 tm C11" |
| 408 | 2440.4266.4276.4790 | Buitenschilderwerk | 4d | 2016-11-08 | 2016-11-11 | 407 |  | 40945 | "3 UITVOERINGSTIJDSCHEMA-BLOKKEN.Blok 12 C12 tm C15" |
| 409 | 2440.4266.4276.4794 | Buitenschilderwerk | 2d | 2016-11-16 | 2016-11-17 | 408 |  | 40985 | "3 UITVOERINGSTIJDSCHEMA-BLOKKEN.Blok 13 C16 en C17" |
| 410 | 2440.4266.4276.4795 | Buitenschilderwerk | 2d | 2016-11-18 | 2016-11-21 | 409 |  | 40995 | "3 UITVOERINGSTIJDSCHEMA-BLOKKEN.Blok 14 C18 en C19" |
| 411 | 2440.4266.4276.4796 | Buitenschilderwerk | 2d | 2016-11-22 | 2016-11-23 | 410 |  | 41005 | "3 UITVOERINGSTIJDSCHEMA-BLOKKEN.Blok 15 C20 en C21" |
| 412 | 2440.4266.4276.5079 | Buitenschilderwerk | 4d | 2016-11-24 | 2016-11-29 | 411 |  | 50755 | "3 UITVOERINGSTIJDSCHEMA-BLOKKEN.Blok 16 C22 tm C29" |
| 413 | 2440.4266.4276.4797 | Luiken plaatsen | 2d | 2016-11-04 | 2016-11-07 |  | start no earlier than 2016-11-04 | 41105 | "3 UITVOERINGSTIJDSCHEMA-BLOKKEN.Blok 10 C01 tm C07" |
| 414 | 2440.4266.4276.4798 | Luiken plaatsen | 2d | 2016-11-14 | 2016-11-15 | 413 |  | 41115 | "3 UITVOERINGSTIJDSCHEMA-BLOKKEN.Blok 11 C08 tm C11" |
| 415 | 2440.4266.4276.4799 | Luiken plaatsen | 2d | 2016-11-21 | 2016-11-22 | 414 |  | 41125 | "3 UITVOERINGSTIJDSCHEMA-BLOKKEN.Blok 12 C12 tm C15" |
| 416 | 2440.4266.4276.5080 | Luiken plaatsen | 2d | 2016-11-30 | 2016-12-01 | 415 |  | 50765 | "3 UITVOERINGSTIJDSCHEMA-BLOKKEN.Blok 16 C22 tm C29" |
| 417 | 2440.4266.4276.4803 | Frans balkon hekwerk plaatsen | 1d | 2016-11-18 | 2016-11-18 |  | start no earlier than 2016-11-18 | 41195 | "3 UITVOERINGSTIJDSCHEMA-BLOKKEN.Blok 13 C16 en C17" |
| 418 | 2440.4266.4276.4804 | Frans balkon hekwerk plaatsen | 1d | 2016-11-22 | 2016-11-22 | 417 |  | 41205 | "3 UITVOERINGSTIJDSCHEMA-BLOKKEN.Blok 14 C18 en C19" |
| 419 | 2440.4266.4276.4805 | Frans balkon hekwerk plaatsen | 1d | 2016-11-24 | 2016-11-24 | 418 |  | 41215 | "3 UITVOERINGSTIJDSCHEMA-BLOKKEN.Blok 15 C20 en C21" |
| 420 | 2440.4266.4276.4806 | Zakken steiger | 4d | 2016-10-28 | 2016-11-03 |  | start no earlier than 2016-10-28 | 41225 | "3 UITVOERINGSTIJDSCHEMA-BLOKKEN.Blok 10 C01 tm C07" |
| 421 | 2440.4266.4276.4807 | Zakken steiger | 4d | 2016-11-07 | 2016-11-10 | 420 |  | 41235 | "3 UITVOERINGSTIJDSCHEMA-BLOKKEN.Blok 11 C08 tm C11" |
| 422 | 2440.4266.4276.4808 | Zakken steiger | 4d | 2016-11-14 | 2016-11-17 | 421 |  | 41245 | "3 UITVOERINGSTIJDSCHEMA-BLOKKEN.Blok 12 C12 tm C15" |
| 423 | 2440.4266.4276.4812 | Zakken steiger | 2d | 2016-11-21 | 2016-11-22 | 422 |  | 41285 | "3 UITVOERINGSTIJDSCHEMA-BLOKKEN.Blok 13 C16 en C17" |
| 424 | 2440.4266.4276.4813 | Zakken steiger | 2d | 2016-11-23 | 2016-11-24 | 423 |  | 41295 | "3 UITVOERINGSTIJDSCHEMA-BLOKKEN.Blok 14 C18 en C19" |
| 425 | 2440.4266.4276.4814 | Zakken steiger | 2d | 2016-11-25 | 2016-11-28 | 424 |  | 41305 | "3 UITVOERINGSTIJDSCHEMA-BLOKKEN.Blok 15 C20 en C21" |
| 426 | 2440.4266.4276.5088 | Zakken steiger | 4d | 2016-11-30 | 2016-12-05 | 425 |  | 50775 | "3 UITVOERINGSTIJDSCHEMA-BLOKKEN.Blok 16 C22 tm C29" |

| ID | WBS | Task | Duration | Start | Finish | Predecessors | Constraint | Unique_Task_ID | CodeLibrary:"Legenda" |
| --- | --- | --- | --- | --- | --- | --- | --- | --- | --- |
| 428 | 2440.4266.4271 | **AFBOUW** | 544h | 2016-09-26 | 2017-01-23 |  | start no earlier than 2016-09-26 | 30478 | "3 UITVOERINGSTIJDSCHEMA-BLOKKEN.Blok 10 C01 tm C07" |
| 429 | 2440.4266.4271.4288 | Houten trappen plaatsen | 4d | 2016-09-26 | 2016-09-29 | 317 |  | 31305 | "3 UITVOERINGSTIJDSCHEMA-BLOKKEN.Blok 10 C01 tm C07" |
| 430 | 2440.4266.4271.4815 | Houten trappen plaatsen | 2d | 2016-09-30 | 2016-10-03 | 429 |  | 41325 | "3 UITVOERINGSTIJDSCHEMA-BLOKKEN.Blok 11 C08 tm C11" |
| 431 | 2440.4266.4271.4816 | Houten trappen plaatsen | 2d | 2016-10-07 | 2016-10-10 | 430 |  | 41335 | "3 UITVOERINGSTIJDSCHEMA-BLOKKEN.Blok 12 C12 tm C15" |
| 432 | 2440.4266.4271.4820 | Houten trappen plaatsen | 1d | 2016-10-13 | 2016-10-13 | 431 |  | 41365 | "3 UITVOERINGSTIJDSCHEMA-BLOKKEN.Blok 13 C16 en C17" |
| 433 | 2440.4266.4271.4821 | Houten trappen plaatsen | 1d | 2016-10-18 | 2016-10-18 | 432 |  | 41375 | "3 UITVOERINGSTIJDSCHEMA-BLOKKEN.Blok 14 C18 en C19" |
| 434 | 2440.4266.4271.4822 | Houten trappen plaatsen | 1d | 2016-10-20 | 2016-10-20 | 433 |  | 41385 | "3 UITVOERINGSTIJDSCHEMA-BLOKKEN.Blok 15 C20 en C21" |
| 435 | 2440.4266.4271.5089 | Houten trappen plaatsen | 4d | 2016-10-26 | 2016-10-31 | 434 |  | 50785 | "3 UITVOERINGSTIJDSCHEMA-BLOKKEN.Blok 16 C22 tm C29" |
| 436 | 2440.4266.4271.4823 | Ytong- bouwer | 7d | 2016-09-27 | 2016-10-06 |  | start no earlier than 2016-09-27 | 30488 | "3 UITVOERINGSTIJDSCHEMA-BLOKKEN.Blok 10 C01 tm C07" |
| 437 | 2440.4266.4271.4824 | Ytong- bouwer | 4d | 2016-10-07 | 2016-10-12 | 436 |  | 41485 | "3 UITVOERINGSTIJDSCHEMA-BLOKKEN.Blok 11 C08 tm C11" |
| 438 | 2440.4266.4271.4825 | Ytong- bouwer | 4d | 2016-10-13 | 2016-10-18 | 437 |  | 41495 | "3 UITVOERINGSTIJDSCHEMA-BLOKKEN.Blok 12 C12 tm C15" |
| 439 | 2440.4266.4271.4829 | Ytong- bouwer | 2d | 2016-10-19 | 2016-10-20 | 438 |  | 41535 | "3 UITVOERINGSTIJDSCHEMA-BLOKKEN.Blok 13 C16 en C17" |
| 440 | 2440.4266.4271.4830 | Ytong- bouwer | 2d | 2016-10-21 | 2016-10-24 | 439 |  | 41545 | "3 UITVOERINGSTIJDSCHEMA-BLOKKEN.Blok 14 C18 en C19" |
| 441 | 2440.4266.4271.4831 | Ytong- bouwer | 2d | 2016-10-25 | 2016-10-26 | 440 |  | 41555 | "3 UITVOERINGSTIJDSCHEMA-BLOKKEN.Blok 15 C20 en C21" |
| 442 | 2440.4266.4271.5097 | Ytong- bouwer | 8d | 2016-10-27 | 2016-11-08 | 441 |  | 50795 | "3 UITVOERINGSTIJDSCHEMA-BLOKKEN.Blok 16 C22 tm C29" |
| 443 | 2440.4266.4271.5322 | Meterkastschotten aanbrengen | 7d | 2016-09-29 | 2016-10-10 |  | start no earlier than 2016-09-29 | 51955 | "3 UITVOERINGSTIJDSCHEMA-BLOKKEN.Blok 10 C01 tm C07" |
| 444 | 2440.4266.4271.5323 | Meterkastschotten aanbrengen | 4d | 2016-10-11 | 2016-10-14 | 443 |  | 51965 | "3 UITVOERINGSTIJDSCHEMA-BLOKKEN.Blok 11 C08 tm C11" |
| 445 | 2440.4266.4271.5324 | Meterkastschotten aanbrengen | 4d | 2016-10-17 | 2016-10-20 | 444 |  | 51975 | "3 UITVOERINGSTIJDSCHEMA-BLOKKEN.Blok 12 C12 tm C15" |
| 446 | 2440.4266.4271.5325 | Meterkastschotten aanbrengen | 2d | 2016-10-21 | 2016-10-24 | 445 |  | 51985 | "3 UITVOERINGSTIJDSCHEMA-BLOKKEN.Blok 13 C16 en C17" |
| 447 | 2440.4266.4271.5326 | Meterkastschotten aanbrengen | 2d | 2016-10-25 | 2016-10-26 | 446 |  | 51995 | "3 UITVOERINGSTIJDSCHEMA-BLOKKEN.Blok 14 C18 en C19" |
| 448 | 2440.4266.4271.5327 | Meterkastschotten aanbrengen | 2d | 2016-10-27 | 2016-10-28 | 447 |  | 52005 | "3 UITVOERINGSTIJDSCHEMA-BLOKKEN.Blok 15 C20 en C21" |
| 449 | 2440.4266.4271.5328 | Meterkastschotten aanbrengen | 8d | 2016-10-31 | 2016-11-10 | 448 |  | 52015 | "3 UITVOERINGSTIJDSCHEMA-BLOKKEN.Blok 16 C22 tm C29" |
| 450 | 2440.4266.4271.4832 | Aftekenen leidingwerk binnenwanden E- en W- installateurs | 7d | 2016-09-29 | 2016-10-10 |  | start no earlier than 2016-09-29 | 41635 | "3 UITVOERINGSTIJDSCHEMA-BLOKKEN.Blok 10 C01 tm C07" |
| 451 | 2440.4266.4271.4833 | Aftekenen leidingwerk binnenwanden E- en W- installateurs | 4d | 2016-10-11 | 2016-10-14 | 450 |  | 41645 | "3 UITVOERINGSTIJDSCHEMA-BLOKKEN.Blok 11 C08 tm C11" |
| 452 | 2440.4266.4271.4834 | Aftekenen leidingwerk binnenwanden E- en W- installateurs | 4d | 2016-10-17 | 2016-10-20 | 451 |  | 41655 | "3 UITVOERINGSTIJDSCHEMA-BLOKKEN.Blok 12 C12 tm C15" |
| 453 | 2440.4266.4271.4838 | Aftekenen leidingwerk binnenwanden E- en W- installateurs | 2d | 2016-10-21 | 2016-10-24 | 452 |  | 41695 | "3 UITVOERINGSTIJDSCHEMA-BLOKKEN.Blok 13 C16 en C17" |
| 454 | 2440.4266.4271.4839 | Aftekenen leidingwerk binnenwanden E- en W- installateurs | 2d | 2016-10-25 | 2016-10-26 | 453 |  | 41705 | "3 UITVOERINGSTIJDSCHEMA-BLOKKEN.Blok 14 C18 en C19" |
| 455 | 2440.4266.4271.4840 | Aftekenen leidingwerk binnenwanden E- en W- installateurs | 2d | 2016-10-27 | 2016-10-28 | 454 |  | 41715 | "3 UITVOERINGSTIJDSCHEMA-BLOKKEN.Blok 15 C20 en C21" |
| 456 | 2440.4266.4271.5098 | Aftekenen leidingwerk binnenwanden E- en W- installateurs | 8d | 2016-10-31 | 2016-11-10 | 455 |  | 50805 | "3 UITVOERINGSTIJDSCHEMA-BLOKKEN.Blok 16 C22 tm C29" |
| 457 | 2440.4266.4271.4841 | Freeswerk binnenwanden | 7d | 2016-09-30 | 2016-10-11 |  | start no earlier than 2016-09-30 | 41725 | "3 UITVOERINGSTIJDSCHEMA-BLOKKEN.Blok 10 C01 tm C07" |
| 458 | 2440.4266.4271.4842 | Freeswerk binnenwanden | 4d | 2016-10-12 | 2016-10-17 | 457 |  | 41735 | "3 UITVOERINGSTIJDSCHEMA-BLOKKEN.Blok 11 C08 tm C11" |
| 459 | 2440.4266.4271.4843 | Freeswerk binnenwanden | 4d | 2016-10-18 | 2016-10-21 | 458 |  | 41745 | "3 UITVOERINGSTIJDSCHEMA-BLOKKEN.Blok 12 C12 tm C15" |
| 460 | 2440.4266.4271.4847 | Freeswerk binnenwanden | 2d | 2016-10-24 | 2016-10-25 | 459 |  | 41785 | "3 UITVOERINGSTIJDSCHEMA-BLOKKEN.Blok 13 C16 en C17" |
| 461 | 2440.4266.4271.4848 | Freeswerk binnenwanden | 2d | 2016-10-26 | 2016-10-27 | 460 |  | 41795 | "3 UITVOERINGSTIJDSCHEMA-BLOKKEN.Blok 14 C18 en C19" |
| 462 | 2440.4266.4271.4849 | Freeswerk binnenwanden | 2d | 2016-10-28 | 2016-10-31 | 461 |  | 41805 | "3 UITVOERINGSTIJDSCHEMA-BLOKKEN.Blok 15 C20 en C21" |
| 463 | 2440.4266.4271.5106 | Freeswerk binnenwanden | 8d | 2016-11-01 | 2016-11-11 | 462 |  | 50815 | "3 UITVOERINGSTIJDSCHEMA-BLOKKEN.Blok 16 C22 tm C29" |
| 464 | 2440.4266.4271.4850 | Leidingwerk binnenwanden W- installateurs | 7d | 2016-10-03 | 2016-10-12 |  | start no earlier than 2016-10-03 | 41905 | "3 UITVOERINGSTIJDSCHEMA-BLOKKEN.Blok 10 C01 tm C07" |
| 465 | 2440.4266.4271.4851 | Leidingwerk binnenwanden W- installateurs | 4d | 2016-10-13 | 2016-10-18 | 464 |  | 41915 | "3 UITVOERINGSTIJDSCHEMA-BLOKKEN.Blok 11 C08 tm C11" |
| 466 | 2440.4266.4271.4852 | Leidingwerk binnenwanden W- installateurs | 4d | 2016-10-19 | 2016-10-24 | 465 |  | 41925 | "3 UITVOERINGSTIJDSCHEMA-BLOKKEN.Blok 12 C12 tm C15" |
| 467 | 2440.4266.4271.4856 | Leidingwerk binnenwanden W- installateurs | 2d | 2016-10-25 | 2016-10-26 | 466 |  | 41965 | "3 UITVOERINGSTIJDSCHEMA-BLOKKEN.Blok 13 C16 en C17" |
| 468 | 2440.4266.4271.4857 | Leidingwerk binnenwanden W- installateurs | 2d | 2016-10-27 | 2016-10-28 | 467 |  | 41975 | "3 UITVOERINGSTIJDSCHEMA-BLOKKEN.Blok 14 C18 en C19" |
| 469 | 2440.4266.4271.4858 | Leidingwerk binnenwanden W- installateurs | 2d | 2016-10-31 | 2016-11-01 | 468 |  | 41985 | "3 UITVOERINGSTIJDSCHEMA-BLOKKEN.Blok 15 C20 en C21" |
| 470 | 2440.4266.4271.5107 | Leidingwerk binnenwanden W- installateurs | 8d | 2016-11-03 | 2016-11-14 | 469 |  | 50825 | "3 UITVOERINGSTIJDSCHEMA-BLOKKEN.Blok 16 C22 tm C29" |
| 471 | 2440.4266.4271.4859 | Leidingwerk binnenwanden E- installateurs | 7d | 2016-10-03 | 2016-10-12 |  | start no earlier than 2016-10-03 | 41995 | "3 UITVOERINGSTIJDSCHEMA-BLOKKEN.Blok 10 C01 tm C07" |
| 472 | 2440.4266.4271.4860 | Leidingwerk binnenwanden E- installateurs | 4d | 2016-10-13 | 2016-10-18 | 471 |  | 42005 | "3 UITVOERINGSTIJDSCHEMA-BLOKKEN.Blok 11 C08 tm C11" |
| 473 | 2440.4266.4271.4861 | Leidingwerk binnenwanden E- installateurs | 4d | 2016-10-19 | 2016-10-24 | 472 |  | 42015 | "3 UITVOERINGSTIJDSCHEMA-BLOKKEN.Blok 12 C12 tm C15" |
| 474 | 2440.4266.4271.4865 | Leidingwerk binnenwanden E- installateurs | 2d | 2016-10-25 | 2016-10-26 | 473 |  | 42055 | "3 UITVOERINGSTIJDSCHEMA-BLOKKEN.Blok 13 C16 en C17" |
| 475 | 2440.4266.4271.4866 | Leidingwerk binnenwanden E- installateurs | 2d | 2016-10-27 | 2016-10-28 | 474 |  | 42065 | "3 UITVOERINGSTIJDSCHEMA-BLOKKEN.Blok 14 C18 en C19" |
| 476 | 2440.4266.4271.4867 | Leidingwerk binnenwanden E- installateurs | 2d | 2016-10-31 | 2016-11-01 | 475 |  | 42075 | "3 UITVOERINGSTIJDSCHEMA-BLOKKEN.Blok 15 C20 en C21" |
| 477 | 2440.4266.4271.5115 | Leidingwerk binnenwanden E- installateurs | 8d | 2016-11-03 | 2016-11-14 | 476 |  | 50835 | "3 UITVOERINGSTIJDSCHEMA-BLOKKEN.Blok 16 C22 tm C29" |
| 478 | 2440.4266.4271.5280 | Stucadoor Ytong | 7d | 2016-10-04 | 2016-10-13 |  | start no earlier than 2016-10-04 | 51535 | "3 UITVOERINGSTIJDSCHEMA-BLOKKEN.Blok 10 C01 tm C07" |
| 479 | 2440.4266.4271.5281 | Stucadoor Ytong | 4d | 2016-10-14 | 2016-10-19 | 478 |  | 51545 | "3 UITVOERINGSTIJDSCHEMA-BLOKKEN.Blok 11 C08 tm C11" |
| 480 | 2440.4266.4271.5282 | Stucadoor Ytong | 4d | 2016-10-20 | 2016-10-25 | 479 |  | 51555 | "3 UITVOERINGSTIJDSCHEMA-BLOKKEN.Blok 12 C12 tm C15" |
| 481 | 2440.4266.4271.5283 | Stucadoor Ytong | 2d | 2016-10-26 | 2016-10-27 | 480 |  | 51565 | "3 UITVOERINGSTIJDSCHEMA-BLOKKEN.Blok 13 C16 en C17" |
| 482 | 2440.4266.4271.5284 | Stucadoor Ytong | 2d | 2016-10-28 | 2016-10-31 | 481 |  | 51575 | "3 UITVOERINGSTIJDSCHEMA-BLOKKEN.Blok 14 C18 en C19" |
| 483 | 2440.4266.4271.5285 | Stucadoor Ytong | 2d | 2016-11-01 | 2016-11-03 | 482 |  | 51585 | "3 UITVOERINGSTIJDSCHEMA-BLOKKEN.Blok 15 C20 en C21" |
| 484 | 2440.4266.4271.5286 | Stucadoor Ytong | 8d | 2016-11-04 | 2016-11-15 | 483 |  | 51595 | "3 UITVOERINGSTIJDSCHEMA-BLOKKEN.Blok 16 C22 tm C29" |
| 485 | 2440.4266.4271.5287 | Stuc- en tegelwerk gereed maken | 7d | 2016-10-10 | 2016-10-18 |  | start no earlier than 2016-10-10 | 51605 | "3 UITVOERINGSTIJDSCHEMA-BLOKKEN.Blok 10 C01 tm C07" |
| 486 | 2440.4266.4271.5288 | Stuc- en tegelwerk gereed maken | 4d | 2016-10-19 | 2016-10-24 | 485 |  | 51615 | "3 UITVOERINGSTIJDSCHEMA-BLOKKEN.Blok 11 C08 tm C11" |
| 487 | 2440.4266.4271.5289 | Stuc- en tegelwerk gereed maken | 4d | 2016-10-25 | 2016-10-28 | 486 |  | 51625 | "3 UITVOERINGSTIJDSCHEMA-BLOKKEN.Blok 12 C12 tm C15" |
| 488 | 2440.4266.4271.5290 | Stuc- en tegelwerk gereed maken | 2d | 2016-10-31 | 2016-11-01 | 487 |  | 51635 | "3 UITVOERINGSTIJDSCHEMA-BLOKKEN.Blok 13 C16 en C17" |
| 489 | 2440.4266.4271.5291 | Stuc- en tegelwerk gereed maken | 2d | 2016-11-03 | 2016-11-04 | 488 |  | 51645 | "3 UITVOERINGSTIJDSCHEMA-BLOKKEN.Blok 14 C18 en C19" |
| 490 | 2440.4266.4271.5292 | Stuc- en tegelwerk gereed maken | 2d | 2016-11-07 | 2016-11-08 | 489 |  | 51655 | "3 UITVOERINGSTIJDSCHEMA-BLOKKEN.Blok 15 C20 en C21" |
| 491 | 2440.4266.4271.5293 | Stuc- en tegelwerk gereed maken | 8d | 2016-11-09 | 2016-11-18 | 490 |  | 51665 | "3 UITVOERINGSTIJDSCHEMA-BLOKKEN.Blok 16 C22 tm C29" |
| 492 | 2440.4266.4271.5294 | Werkzaamheden voor vloerensmeerder | 7d | 2016-10-11 | 2016-10-19 |  | start no earlier than 2016-10-11 | 51675 | "3 UITVOERINGSTIJDSCHEMA-BLOKKEN.Blok 10 C01 tm C07" |
| 493 | 2440.4266.4271.5295 | Werkzaamheden voor vloerensmeerder | 4d | 2016-10-20 | 2016-10-25 | 492 |  | 51685 | "3 UITVOERINGSTIJDSCHEMA-BLOKKEN.Blok 11 C08 tm C11" |
| 494 | 2440.4266.4271.5296 | Werkzaamheden voor vloerensmeerder | 4d | 2016-10-26 | 2016-10-31 | 493 |  | 51695 | "3 UITVOERINGSTIJDSCHEMA-BLOKKEN.Blok 12 C12 tm C15" |
| 495 | 2440.4266.4271.5297 | Werkzaamheden voor vloerensmeerder | 2d | 2016-11-01 | 2016-11-03 | 494 |  | 51705 | "3 UITVOERINGSTIJDSCHEMA-BLOKKEN.Blok 13 C16 en C17" |
| 496 | 2440.4266.4271.5298 | Werkzaamheden voor vloerensmeerder | 2d | 2016-11-04 | 2016-11-07 | 495 |  | 51715 | "3 UITVOERINGSTIJDSCHEMA-BLOKKEN.Blok 14 C18 en C19" |
| 497 | 2440.4266.4271.5299 | Werkzaamheden voor vloerensmeerder | 2d | 2016-11-08 | 2016-11-09 | 496 |  | 51725 | "3 UITVOERINGSTIJDSCHEMA-BLOKKEN.Blok 15 C20 en C21" |

| ID | WBS | Task | Duration | Start | Finish | Predecessors | Constraint | Unique_Task_ID | CodeLibrary:"Legenda" |
| --- | --- | --- | --- | --- | --- | --- | --- | --- | --- |
| 498 | 2440.4266.4271.5300 | Werkzaamheden voor vloerensmeerder | 8d | 2016-11-10 | 2016-11-21 | 497 |  | 51735 | "3 UITVOERINGSTIJDSCHEMA-BLOKKEN.Blok 16 C22 tm C29" |
| 499 | 2440.4266.4271.5301 | Leidingen installateurs in sleuven leggen | 7d | 2016-10-12 | 2016-10-20 |  | start no earlier than 2016-10-12 | 51745 | "3 UITVOERINGSTIJDSCHEMA-BLOKKEN.Blok 10 C01 tm C07" |
| 500 | 2440.4266.4271.5302 | Leidingen installateurs in sleuven leggen | 4d | 2016-10-21 | 2016-10-26 | 499 |  | 51755 | "3 UITVOERINGSTIJDSCHEMA-BLOKKEN.Blok 11 C08 tm C11" |
| 501 | 2440.4266.4271.5303 | Leidingen installateurs in sleuven leggen | 4d | 2016-10-27 | 2016-11-01 | 500 |  | 51765 | "3 UITVOERINGSTIJDSCHEMA-BLOKKEN.Blok 12 C12 tm C15" |
| 502 | 2440.4266.4271.5304 | Leidingen installateurs in sleuven leggen | 2d | 2016-11-03 | 2016-11-04 | 501 |  | 51775 | "3 UITVOERINGSTIJDSCHEMA-BLOKKEN.Blok 13 C16 en C17" |
| 503 | 2440.4266.4271.5305 | Leidingen installateurs in sleuven leggen | 2d | 2016-11-07 | 2016-11-08 | 502 |  | 51785 | "3 UITVOERINGSTIJDSCHEMA-BLOKKEN.Blok 14 C18 en C19" |
| 504 | 2440.4266.4271.5306 | Leidingen installateurs in sleuven leggen | 2d | 2016-11-09 | 2016-11-10 | 503 |  | 51795 | "3 UITVOERINGSTIJDSCHEMA-BLOKKEN.Blok 15 C20 en C21" |
| 505 | 2440.4266.4271.5307 | Leidingen installateurs in sleuven leggen | 8d | 2016-11-11 | 2016-11-22 | 504 |  | 51805 | "3 UITVOERINGSTIJDSCHEMA-BLOKKEN.Blok 16 C22 tm C29" |
| 506 | 2440.4266.4271.5308 | Leidingwerk E en W in cd-vloer leggen | 7d | 2016-10-13 | 2016-10-21 |  | start no earlier than 2016-10-13 | 51815 | "3 UITVOERINGSTIJDSCHEMA-BLOKKEN.Blok 10 C01 tm C07" |
| 507 | 2440.4266.4271.5309 | Leidingwerk E en W in cd-vloer leggen | 4d | 2016-10-24 | 2016-10-27 | 506 |  | 51825 | "3 UITVOERINGSTIJDSCHEMA-BLOKKEN.Blok 11 C08 tm C11" |
| 508 | 2440.4266.4271.5310 | Leidingwerk E en W in cd-vloer leggen | 4d | 2016-10-28 | 2016-11-03 | 507 |  | 51835 | "3 UITVOERINGSTIJDSCHEMA-BLOKKEN.Blok 12 C12 tm C15" |
| 509 | 2440.4266.4271.5311 | Leidingwerk E en W in cd-vloer leggen | 2d | 2016-11-04 | 2016-11-07 | 508 |  | 51845 | "3 UITVOERINGSTIJDSCHEMA-BLOKKEN.Blok 13 C16 en C17" |
| 510 | 2440.4266.4271.5312 | Leidingwerk E en W in cd-vloer leggen | 2d | 2016-11-08 | 2016-11-09 | 509 |  | 51855 | "3 UITVOERINGSTIJDSCHEMA-BLOKKEN.Blok 14 C18 en C19" |
| 511 | 2440.4266.4271.5313 | Leidingwerk E en W in cd-vloer leggen | 2d | 2016-11-10 | 2016-11-11 | 510 |  | 51865 | "3 UITVOERINGSTIJDSCHEMA-BLOKKEN.Blok 15 C20 en C21" |
| 512 | 2440.4266.4271.5314 | Leidingwerk E en W in cd-vloer leggen | 8d | 2016-11-14 | 2016-11-23 | 511 |  | 51875 | "3 UITVOERINGSTIJDSCHEMA-BLOKKEN.Blok 16 C22 tm C29" |
| 513 | 2440.4266.4271.5315 | Cementdekvloer aanbrengen | 7d | 2016-10-14 | 2016-10-24 |  | start no earlier than 2016-10-14 | 51885 | "3 UITVOERINGSTIJDSCHEMA-BLOKKEN.Blok 10 C01 tm C07" |
| 514 | 2440.4266.4271.5316 | Cementdekvloer aanbrengen | 4d | 2016-10-25 | 2016-10-28 | 513 |  | 51895 | "3 UITVOERINGSTIJDSCHEMA-BLOKKEN.Blok 11 C08 tm C11" |
| 515 | 2440.4266.4271.5317 | Cementdekvloer aanbrengen | 4d | 2016-10-31 | 2016-11-04 | 514 |  | 51905 | "3 UITVOERINGSTIJDSCHEMA-BLOKKEN.Blok 12 C12 tm C15" |
| 516 | 2440.4266.4271.5318 | Cementdekvloer aanbrengen | 2d | 2016-11-07 | 2016-11-08 | 515 |  | 51915 | "3 UITVOERINGSTIJDSCHEMA-BLOKKEN.Blok 13 C16 en C17" |
| 517 | 2440.4266.4271.5319 | Cementdekvloer aanbrengen | 2d | 2016-11-09 | 2016-11-10 | 516 |  | 51925 | "3 UITVOERINGSTIJDSCHEMA-BLOKKEN.Blok 14 C18 en C19" |
| 518 | 2440.4266.4271.5320 | Cementdekvloer aanbrengen | 2d | 2016-11-11 | 2016-11-14 | 517 |  | 51935 | "3 UITVOERINGSTIJDSCHEMA-BLOKKEN.Blok 15 C20 en C21" |
| 519 | 2440.4266.4271.5321 | Cementdekvloer aanbrengen | 8d | 2016-11-15 | 2016-11-24 | 518 |  | 51945 | "3 UITVOERINGSTIJDSCHEMA-BLOKKEN.Blok 16 C22 tm C29" |
| 520 | 2440.4266.4271.5329 | NUTS-invoering | 7d | 2016-11-04 | 2016-11-14 | 420 |  | 52025 | "3 UITVOERINGSTIJDSCHEMA-BLOKKEN.Blok 10 C01 tm C07" |
| 521 | 2440.4266.4271.5330 | NUTS-invoering | 4d | 2016-11-15 | 2016-11-18 | 520 |  | 52035 | "3 UITVOERINGSTIJDSCHEMA-BLOKKEN.Blok 11 C08 tm C11" |
| 522 | 2440.4266.4271.5331 | NUTS-invoering | 4d | 2016-11-21 | 2016-11-24 | 521 |  | 52045 | "3 UITVOERINGSTIJDSCHEMA-BLOKKEN.Blok 12 C12 tm C15" |
| 523 | 2440.4266.4271.5332 | NUTS-invoering | 2d | 2016-11-25 | 2016-11-28 | 522 |  | 52055 | "3 UITVOERINGSTIJDSCHEMA-BLOKKEN.Blok 13 C16 en C17" |
| 524 | 2440.4266.4271.5333 | NUTS-invoering | 2d | 2016-11-29 | 2016-11-30 | 523 |  | 52065 | "3 UITVOERINGSTIJDSCHEMA-BLOKKEN.Blok 14 C18 en C19" |
| 525 | 2440.4266.4271.5334 | NUTS-invoering | 2d | 2016-12-01 | 2016-12-02 | 524 |  | 52075 | "3 UITVOERINGSTIJDSCHEMA-BLOKKEN.Blok 15 C20 en C21" |
| 526 | 2440.4266.4271.5335 | NUTS-invoering | 8d | 2016-12-05 | 2016-12-16 | 525 |  | 52085 | "3 UITVOERINGSTIJDSCHEMA-BLOKKEN.Blok 16 C22 tm C29" |
| 527 | 2440.4266.4271.5336 | Inbouwtoilets monteren | 7d | 2016-10-20 | 2016-10-28 |  | start no earlier than 2016-10-20 | 52095 | "3 UITVOERINGSTIJDSCHEMA-BLOKKEN.Blok 10 C01 tm C07" |
| 528 | 2440.4266.4271.5337 | Inbouwtoilets monteren | 4d | 2016-10-31 | 2016-11-04 | 527 |  | 52105 | "3 UITVOERINGSTIJDSCHEMA-BLOKKEN.Blok 11 C08 tm C11" |
| 529 | 2440.4266.4271.5338 | Inbouwtoilets monteren | 4d | 2016-11-07 | 2016-11-10 | 528 |  | 52115 | "3 UITVOERINGSTIJDSCHEMA-BLOKKEN.Blok 12 C12 tm C15" |
| 530 | 2440.4266.4271.5339 | Inbouwtoilets monteren | 2d | 2016-11-11 | 2016-11-14 | 529 |  | 52125 | "3 UITVOERINGSTIJDSCHEMA-BLOKKEN.Blok 13 C16 en C17" |
| 531 | 2440.4266.4271.5340 | Inbouwtoilets monteren | 2d | 2016-11-15 | 2016-11-16 | 530 |  | 52135 | "3 UITVOERINGSTIJDSCHEMA-BLOKKEN.Blok 14 C18 en C19" |
| 532 | 2440.4266.4271.5341 | Inbouwtoilets monteren | 2d | 2016-11-17 | 2016-11-18 | 531 |  | 52145 | "3 UITVOERINGSTIJDSCHEMA-BLOKKEN.Blok 15 C20 en C21" |
| 533 | 2440.4266.4271.5342 | Inbouwtoilets monteren | 8d | 2016-11-21 | 2016-11-30 | 532 |  | 52155 | "3 UITVOERINGSTIJDSCHEMA-BLOKKEN.Blok 16 C22 tm C29" |
| 534 | 2440.4266.4271.5343 | Vensterbanken leggen | 7d | 2016-10-20 | 2016-10-28 |  | start no earlier than 2016-10-20 | 52165 | "3 UITVOERINGSTIJDSCHEMA-BLOKKEN.Blok 10 C01 tm C07" |
| 535 | 2440.4266.4271.5344 | Vensterbanken leggen | 4d | 2016-10-31 | 2016-11-04 | 534 |  | 52175 | "3 UITVOERINGSTIJDSCHEMA-BLOKKEN.Blok 11 C08 tm C11" |
| 536 | 2440.4266.4271.5345 | Vensterbanken leggen | 4d | 2016-11-07 | 2016-11-10 | 535 |  | 52185 | "3 UITVOERINGSTIJDSCHEMA-BLOKKEN.Blok 12 C12 tm C15" |
| 537 | 2440.4266.4271.5346 | Vensterbanken leggen | 2d | 2016-11-11 | 2016-11-14 | 536 |  | 52195 | "3 UITVOERINGSTIJDSCHEMA-BLOKKEN.Blok 13 C16 en C17" |
| 538 | 2440.4266.4271.5347 | Vensterbanken leggen | 2d | 2016-11-15 | 2016-11-16 | 537 |  | 52205 | "3 UITVOERINGSTIJDSCHEMA-BLOKKEN.Blok 14 C18 en C19" |
| 539 | 2440.4266.4271.5348 | Vensterbanken leggen | 2d | 2016-11-17 | 2016-11-18 | 538 |  | 52215 | "3 UITVOERINGSTIJDSCHEMA-BLOKKEN.Blok 15 C20 en C21" |
| 540 | 2440.4266.4271.5349 | Vensterbanken leggen | 8d | 2016-11-21 | 2016-11-30 | 539 |  | 52225 | "3 UITVOERINGSTIJDSCHEMA-BLOKKEN.Blok 16 C22 tm C29" |
| 541 | 2440.4266.4271.5350 | Stucadoor kalkzandsteen | 7d | 2016-10-24 | 2016-11-01 |  | start no earlier than 2016-10-24 | 52235 | "3 UITVOERINGSTIJDSCHEMA-BLOKKEN.Blok 10 C01 tm C07" |
| 542 | 2440.4266.4271.5351 | Stucadoor kalkzandsteen | 4d | 2016-11-03 | 2016-11-08 | 541 |  | 52245 | "3 UITVOERINGSTIJDSCHEMA-BLOKKEN.Blok 11 C08 tm C11" |
| 543 | 2440.4266.4271.5352 | Stucadoor kalkzandsteen | 4d | 2016-11-09 | 2016-11-14 | 542 |  | 52255 | "3 UITVOERINGSTIJDSCHEMA-BLOKKEN.Blok 12 C12 tm C15" |
| 544 | 2440.4266.4271.5353 | Stucadoor kalkzandsteen | 2d | 2016-11-15 | 2016-11-16 | 543 |  | 52265 | "3 UITVOERINGSTIJDSCHEMA-BLOKKEN.Blok 13 C16 en C17" |
| 545 | 2440.4266.4271.5354 | Stucadoor kalkzandsteen | 2d | 2016-11-17 | 2016-11-18 | 544 |  | 52275 | "3 UITVOERINGSTIJDSCHEMA-BLOKKEN.Blok 14 C18 en C19" |
| 546 | 2440.4266.4271.5355 | Stucadoor kalkzandsteen | 2d | 2016-11-21 | 2016-11-22 | 545 |  | 52285 | "3 UITVOERINGSTIJDSCHEMA-BLOKKEN.Blok 15 C20 en C21" |
| 547 | 2440.4266.4271.5356 | Stucadoor kalkzandsteen | 8d | 2016-11-23 | 2016-12-02 | 546 |  | 52295 | "3 UITVOERINGSTIJDSCHEMA-BLOKKEN.Blok 16 C22 tm C29" |
| 548 | 2440.4266.4271.5357 | Baden en douchebakken plaatsen | 7d | 2016-10-25 | 2016-11-03 |  | start no earlier than 2016-10-25 | 52305 | "3 UITVOERINGSTIJDSCHEMA-BLOKKEN.Blok 10 C01 tm C07" |
| 549 | 2440.4266.4271.5358 | Baden en douchebakken plaatsen | 4d | 2016-11-04 | 2016-11-09 | 548 |  | 52315 | "3 UITVOERINGSTIJDSCHEMA-BLOKKEN.Blok 11 C08 tm C11" |
| 550 | 2440.4266.4271.5359 | Baden en douchebakken plaatsen | 4d | 2016-11-10 | 2016-11-15 | 549 |  | 52325 | "3 UITVOERINGSTIJDSCHEMA-BLOKKEN.Blok 12 C12 tm C15" |
| 551 | 2440.4266.4271.5360 | Baden en douchebakken plaatsen | 2d | 2016-11-16 | 2016-11-17 | 550 |  | 52335 | "3 UITVOERINGSTIJDSCHEMA-BLOKKEN.Blok 13 C16 en C17" |
| 552 | 2440.4266.4271.5361 | Baden en douchebakken plaatsen | 2d | 2016-11-18 | 2016-11-21 | 551 |  | 52345 | "3 UITVOERINGSTIJDSCHEMA-BLOKKEN.Blok 14 C18 en C19" |
| 553 | 2440.4266.4271.5362 | Baden en douchebakken plaatsen | 2d | 2016-11-22 | 2016-11-23 | 552 |  | 52355 | "3 UITVOERINGSTIJDSCHEMA-BLOKKEN.Blok 15 C20 en C21" |
| 554 | 2440.4266.4271.5363 | Baden en douchebakken plaatsen | 8d | 2016-11-24 | 2016-12-05 | 553 |  | 52365 | "3 UITVOERINGSTIJDSCHEMA-BLOKKEN.Blok 16 C22 tm C29" |
| 555 | 2440.4266.4271.5364 | Baden en douchebakken aanwerken | 7d | 2016-10-26 | 2016-11-04 |  | start no earlier than 2016-10-26 | 52375 | "3 UITVOERINGSTIJDSCHEMA-BLOKKEN.Blok 10 C01 tm C07" |
| 556 | 2440.4266.4271.5365 | Baden en douchebakken aanwerken | 4d | 2016-11-07 | 2016-11-10 | 555 |  | 52385 | "3 UITVOERINGSTIJDSCHEMA-BLOKKEN.Blok 11 C08 tm C11" |
| 557 | 2440.4266.4271.5366 | Baden en douchebakken aanwerken | 4d | 2016-11-11 | 2016-11-16 | 556 |  | 52395 | "3 UITVOERINGSTIJDSCHEMA-BLOKKEN.Blok 12 C12 tm C15" |
| 558 | 2440.4266.4271.5367 | Baden en douchebakken aanwerken | 2d | 2016-11-17 | 2016-11-18 | 557 |  | 52405 | "3 UITVOERINGSTIJDSCHEMA-BLOKKEN.Blok 13 C16 en C17" |
| 559 | 2440.4266.4271.5368 | Baden en douchebakken aanwerken | 2d | 2016-11-21 | 2016-11-22 | 558 |  | 52415 | "3 UITVOERINGSTIJDSCHEMA-BLOKKEN.Blok 14 C18 en C19" |
| 560 | 2440.4266.4271.5369 | Baden en douchebakken aanwerken | 2d | 2016-11-23 | 2016-11-24 | 559 |  | 52425 | "3 UITVOERINGSTIJDSCHEMA-BLOKKEN.Blok 15 C20 en C21" |
| 561 | 2440.4266.4271.5370 | Baden en douchebakken aanwerken | 8d | 2016-11-25 | 2016-12-06 | 560 |  | 52435 | "3 UITVOERINGSTIJDSCHEMA-BLOKKEN.Blok 16 C22 tm C29" |
| 562 | 2440.4266.4271.5371 | Binnendeurkozijnen natte ruimten | 7d | 2016-10-27 | 2016-11-07 |  | start no earlier than 2016-10-27 | 52445 | "3 UITVOERINGSTIJDSCHEMA-BLOKKEN.Blok 10 C01 tm C07" |
| 563 | 2440.4266.4271.5372 | Binnendeurkozijnen natte ruimten | 4d | 2016-11-08 | 2016-11-11 | 562 |  | 52455 | "3 UITVOERINGSTIJDSCHEMA-BLOKKEN.Blok 11 C08 tm C11" |
| 564 | 2440.4266.4271.5373 | Binnendeurkozijnen natte ruimten | 4d | 2016-11-14 | 2016-11-17 | 563 |  | 52465 | "3 UITVOERINGSTIJDSCHEMA-BLOKKEN.Blok 12 C12 tm C15" |
| 565 | 2440.4266.4271.5374 | Binnendeurkozijnen natte ruimten | 2d | 2016-11-18 | 2016-11-21 | 564 |  | 52475 | "3 UITVOERINGSTIJDSCHEMA-BLOKKEN.Blok 13 C16 en C17" |
| 566 | 2440.4266.4271.5375 | Binnendeurkozijnen natte ruimten | 2d | 2016-11-22 | 2016-11-23 | 565 |  | 52485 | "3 UITVOERINGSTIJDSCHEMA-BLOKKEN.Blok 14 C18 en C19" |
| 567 | 2440.4266.4271.5376 | Binnendeurkozijnen natte ruimten | 2d | 2016-11-24 | 2016-11-25 | 566 |  | 52495 | "3 UITVOERINGSTIJDSCHEMA-BLOKKEN.Blok 15 C20 en C21" |

| ID | WBS | Task | Duration | Start | Finish | Predecessors | Constraint | Unique_Task_ID | CodeLibrary:"Legenda" |
| --- | --- | --- | --- | --- | --- | --- | --- | --- | --- |
| 568 | 2440.4266.4271.5377 | Binnendeurkozijnen natte ruimten | 8d | 2016-11-28 | 2016-12-08 | 567 |  | 52505 | "3 UITVOERINGSTIJDSCHEMA-BLOKKEN.Blok 16 C22 tm C29" |
| 569 | 2440.4266.4271.5378 | Tegelwerk wanden badkamer / toilet | 7d | 2016-10-28 | 2016-11-08 |  | start no earlier than 2016-10-28 | 52515 | "3 UITVOERINGSTIJDSCHEMA-BLOKKEN.Blok 10 C01 tm C07" |
| 570 | 2440.4266.4271.5379 | Tegelwerk wanden badkamer / toilet | 4d | 2016-11-09 | 2016-11-14 | 569 |  | 52525 | "3 UITVOERINGSTIJDSCHEMA-BLOKKEN.Blok 11 C08 tm C11" |
| 571 | 2440.4266.4271.5380 | Tegelwerk wanden badkamer / toilet | 4d | 2016-11-15 | 2016-11-18 | 570 |  | 52535 | "3 UITVOERINGSTIJDSCHEMA-BLOKKEN.Blok 12 C12 tm C15" |
| 572 | 2440.4266.4271.5381 | Tegelwerk wanden badkamer / toilet | 2d | 2016-11-21 | 2016-11-22 | 571 |  | 52545 | "3 UITVOERINGSTIJDSCHEMA-BLOKKEN.Blok 13 C16 en C17" |
| 573 | 2440.4266.4271.5382 | Tegelwerk wanden badkamer / toilet | 2d | 2016-11-23 | 2016-11-24 | 572 |  | 52555 | "3 UITVOERINGSTIJDSCHEMA-BLOKKEN.Blok 14 C18 en C19" |
| 574 | 2440.4266.4271.5383 | Tegelwerk wanden badkamer / toilet | 2d | 2016-11-25 | 2016-11-28 | 573 |  | 52565 | "3 UITVOERINGSTIJDSCHEMA-BLOKKEN.Blok 15 C20 en C21" |
| 575 | 2440.4266.4271.5384 | Tegelwerk wanden badkamer / toilet | 8d | 2016-11-29 | 2016-12-09 | 574 |  | 52575 | "3 UITVOERINGSTIJDSCHEMA-BLOKKEN.Blok 16 C22 tm C29" |
| 576 | 2440.4266.4271.5385 | Tegelwerk vloeren badkamer / toilet | 7d | 2016-10-31 | 2016-11-09 |  | start no earlier than 2016-10-31 | 52585 | "3 UITVOERINGSTIJDSCHEMA-BLOKKEN.Blok 10 C01 tm C07" |
| 577 | 2440.4266.4271.5386 | Tegelwerk vloeren badkamer / toilet | 4d | 2016-11-10 | 2016-11-15 | 576 |  | 52595 | "3 UITVOERINGSTIJDSCHEMA-BLOKKEN.Blok 11 C08 tm C11" |
| 578 | 2440.4266.4271.5387 | Tegelwerk vloeren badkamer / toilet | 4d | 2016-11-16 | 2016-11-21 | 577 |  | 52605 | "3 UITVOERINGSTIJDSCHEMA-BLOKKEN.Blok 12 C12 tm C15" |
| 579 | 2440.4266.4271.5388 | Tegelwerk vloeren badkamer / toilet | 2d | 2016-11-22 | 2016-11-23 | 578 |  | 52615 | "3 UITVOERINGSTIJDSCHEMA-BLOKKEN.Blok 13 C16 en C17" |
| 580 | 2440.4266.4271.5389 | Tegelwerk vloeren badkamer / toilet | 2d | 2016-11-24 | 2016-11-25 | 579 |  | 52625 | "3 UITVOERINGSTIJDSCHEMA-BLOKKEN.Blok 14 C18 en C19" |
| 581 | 2440.4266.4271.5390 | Tegelwerk vloeren badkamer / toilet | 2d | 2016-11-28 | 2016-11-29 | 580 |  | 52635 | "3 UITVOERINGSTIJDSCHEMA-BLOKKEN.Blok 15 C20 en C21" |
| 582 | 2440.4266.4271.5391 | Tegelwerk vloeren badkamer / toilet | 8d | 2016-11-30 | 2016-12-12 | 581 |  | 52645 | "3 UITVOERINGSTIJDSCHEMA-BLOKKEN.Blok 16 C22 tm C29" |
| 583 | 2440.4266.4271.5392 | Spuitwerk plafonds | 7d | 2016-11-04 | 2016-11-14 | 576SS+4.2% |  | 52655 | "3 UITVOERINGSTIJDSCHEMA-BLOKKEN.Blok 10 C01 tm C07" |
| 584 | 2440.4266.4271.5393 | Spuitwerk plafonds | 4d | 2016-11-15 | 2016-11-18 | 583 |  | 52665 | "3 UITVOERINGSTIJDSCHEMA-BLOKKEN.Blok 11 C08 tm C11" |
| 585 | 2440.4266.4271.5394 | Spuitwerk plafonds | 4d | 2016-11-21 | 2016-11-24 | 584 |  | 52675 | "3 UITVOERINGSTIJDSCHEMA-BLOKKEN.Blok 12 C12 tm C15" |
| 586 | 2440.4266.4271.5395 | Spuitwerk plafonds | 2d | 2016-11-25 | 2016-11-28 | 585 |  | 52685 | "3 UITVOERINGSTIJDSCHEMA-BLOKKEN.Blok 13 C16 en C17" |
| 587 | 2440.4266.4271.5396 | Spuitwerk plafonds | 2d | 2016-11-29 | 2016-11-30 | 586 |  | 52695 | "3 UITVOERINGSTIJDSCHEMA-BLOKKEN.Blok 14 C18 en C19" |
| 588 | 2440.4266.4271.5397 | Spuitwerk plafonds | 2d | 2016-12-01 | 2016-12-02 | 587 |  | 52705 | "3 UITVOERINGSTIJDSCHEMA-BLOKKEN.Blok 15 C20 en C21" |
| 589 | 2440.4266.4271.5398 | Spuitwerk plafonds | 8d | 2016-12-05 | 2016-12-16 | 588 |  | 52715 | "3 UITVOERINGSTIJDSCHEMA-BLOKKEN.Blok 16 C22 tm C29" |
| 590 | 2440.4266.4271.5399 | Aftimmeren compleet | 7d | 2016-11-07 | 2016-11-15 |  | start no earlier than 2016-11-07 | 52725 | "3 UITVOERINGSTIJDSCHEMA-BLOKKEN.Blok 10 C01 tm C07" |
| 591 | 2440.4266.4271.5400 | Aftimmeren compleet | 4d | 2016-11-16 | 2016-11-21 | 590 |  | 52735 | "3 UITVOERINGSTIJDSCHEMA-BLOKKEN.Blok 11 C08 tm C11" |
| 592 | 2440.4266.4271.5401 | Aftimmeren compleet | 4d | 2016-11-22 | 2016-11-25 | 591 |  | 52745 | "3 UITVOERINGSTIJDSCHEMA-BLOKKEN.Blok 12 C12 tm C15" |
| 593 | 2440.4266.4271.5402 | Aftimmeren compleet | 2d | 2016-11-28 | 2016-11-29 | 592 |  | 52755 | "3 UITVOERINGSTIJDSCHEMA-BLOKKEN.Blok 13 C16 en C17" |
| 594 | 2440.4266.4271.5403 | Aftimmeren compleet | 2d | 2016-11-30 | 2016-12-01 | 593 |  | 52765 | "3 UITVOERINGSTIJDSCHEMA-BLOKKEN.Blok 14 C18 en C19" |
| 595 | 2440.4266.4271.5404 | Aftimmeren compleet | 2d | 2016-12-02 | 2016-12-05 | 594 |  | 52775 | "3 UITVOERINGSTIJDSCHEMA-BLOKKEN.Blok 15 C20 en C21" |
| 596 | 2440.4266.4271.5405 | Aftimmeren compleet | 8d | 2016-12-06 | 2016-12-19 | 595 |  | 52785 | "3 UITVOERINGSTIJDSCHEMA-BLOKKEN.Blok 16 C22 tm C29" |
| 597 | 2440.4266.4271.5406 | Binnendeurkozijnen overige ruimten | 7d | 2016-11-08 | 2016-11-16 |  | start no earlier than 2016-11-08 | 52795 | "3 UITVOERINGSTIJDSCHEMA-BLOKKEN.Blok 10 C01 tm C07" |
| 598 | 2440.4266.4271.5407 | Binnendeurkozijnen overige ruimten | 4d | 2016-11-17 | 2016-11-22 | 597 |  | 52805 | "3 UITVOERINGSTIJDSCHEMA-BLOKKEN.Blok 11 C08 tm C11" |
| 599 | 2440.4266.4271.5408 | Binnendeurkozijnen overige ruimten | 4d | 2016-11-23 | 2016-11-28 | 598 |  | 52815 | "3 UITVOERINGSTIJDSCHEMA-BLOKKEN.Blok 12 C12 tm C15" |
| 600 | 2440.4266.4271.5409 | Binnendeurkozijnen overige ruimten | 2d | 2016-11-29 | 2016-11-30 | 599 |  | 52825 | "3 UITVOERINGSTIJDSCHEMA-BLOKKEN.Blok 13 C16 en C17" |
| 601 | 2440.4266.4271.5410 | Binnendeurkozijnen overige ruimten | 2d | 2016-12-01 | 2016-12-02 | 600 |  | 52835 | "3 UITVOERINGSTIJDSCHEMA-BLOKKEN.Blok 14 C18 en C19" |
| 602 | 2440.4266.4271.5411 | Binnendeurkozijnen overige ruimten | 2d | 2016-12-05 | 2016-12-06 | 601 |  | 52845 | "3 UITVOERINGSTIJDSCHEMA-BLOKKEN.Blok 15 C20 en C21" |
| 603 | 2440.4266.4271.5412 | Binnendeurkozijnen overige ruimten | 8d | 2016-12-08 | 2016-12-20 | 602 |  | 52855 | "3 UITVOERINGSTIJDSCHEMA-BLOKKEN.Blok 16 C22 tm C29" |
| 604 | 2440.4266.4271.5413 | Keuken plaatsen | 7d | 2016-11-09 | 2016-11-17 |  | start no earlier than 2016-11-09 | 52865 | "3 UITVOERINGSTIJDSCHEMA-BLOKKEN.Blok 10 C01 tm C07" |
| 605 | 2440.4266.4271.5414 | Keuken plaatsen | 4d | 2016-11-18 | 2016-11-23 | 604 |  | 52875 | "3 UITVOERINGSTIJDSCHEMA-BLOKKEN.Blok 11 C08 tm C11" |
| 606 | 2440.4266.4271.5415 | Keuken plaatsen | 4d | 2016-11-24 | 2016-11-29 | 605 |  | 52885 | "3 UITVOERINGSTIJDSCHEMA-BLOKKEN.Blok 12 C12 tm C15" |
| 607 | 2440.4266.4271.5416 | Keuken plaatsen | 2d | 2016-11-30 | 2016-12-01 | 606 |  | 52895 | "3 UITVOERINGSTIJDSCHEMA-BLOKKEN.Blok 13 C16 en C17" |
| 608 | 2440.4266.4271.5417 | Keuken plaatsen | 2d | 2016-12-02 | 2016-12-05 | 607 |  | 52905 | "3 UITVOERINGSTIJDSCHEMA-BLOKKEN.Blok 14 C18 en C19" |
| 609 | 2440.4266.4271.5418 | Keuken plaatsen | 2d | 2016-12-06 | 2016-12-08 | 608 |  | 52915 | "3 UITVOERINGSTIJDSCHEMA-BLOKKEN.Blok 15 C20 en C21" |
| 610 | 2440.4266.4271.5419 | Keuken plaatsen | 8d | 2016-12-09 | 2016-12-22 | 609 |  | 52925 | "3 UITVOERINGSTIJDSCHEMA-BLOKKEN.Blok 16 C22 tm C29" |
| 611 | 2440.4266.4271.5420 | Radiatoren hangen | 7d | 2016-11-11 | 2016-11-21 |  | start no earlier than 2016-11-11 | 52935 | "3 UITVOERINGSTIJDSCHEMA-BLOKKEN.Blok 10 C01 tm C07" |
| 612 | 2440.4266.4271.5421 | Radiatoren hangen | 4d | 2016-11-22 | 2016-11-25 | 611 |  | 52945 | "3 UITVOERINGSTIJDSCHEMA-BLOKKEN.Blok 11 C08 tm C11" |
| 613 | 2440.4266.4271.5422 | Radiatoren hangen | 4d | 2016-11-28 | 2016-12-01 | 612 |  | 52955 | "3 UITVOERINGSTIJDSCHEMA-BLOKKEN.Blok 12 C12 tm C15" |
| 614 | 2440.4266.4271.5423 | Radiatoren hangen | 2d | 2016-12-02 | 2016-12-05 | 613 |  | 52965 | "3 UITVOERINGSTIJDSCHEMA-BLOKKEN.Blok 13 C16 en C17" |
| 615 | 2440.4266.4271.5424 | Radiatoren hangen | 2d | 2016-12-06 | 2016-12-08 | 614 |  | 52975 | "3 UITVOERINGSTIJDSCHEMA-BLOKKEN.Blok 14 C18 en C19" |
| 616 | 2440.4266.4271.5425 | Radiatoren hangen | 2d | 2016-12-09 | 2016-12-12 | 615 |  | 52985 | "3 UITVOERINGSTIJDSCHEMA-BLOKKEN.Blok 15 C20 en C21" |
| 617 | 2440.4266.4271.5426 | Radiatoren hangen | 8d | 2016-12-13 | 2017-01-09 | 616 |  | 52995 | "3 UITVOERINGSTIJDSCHEMA-BLOKKEN.Blok 16 C22 tm C29" |
| 618 | 2440.4266.4271.5427 | Afmontage mechanische ventilatie | 7d | 2016-11-14 | 2016-11-22 |  | start no earlier than 2016-11-14 | 53005 | "3 UITVOERINGSTIJDSCHEMA-BLOKKEN.Blok 10 C01 tm C07" |
| 619 | 2440.4266.4271.5428 | Afmontage mechanische ventilatie | 4d | 2016-11-23 | 2016-11-28 | 618 |  | 53015 | "3 UITVOERINGSTIJDSCHEMA-BLOKKEN.Blok 11 C08 tm C11" |
| 620 | 2440.4266.4271.5429 | Afmontage mechanische ventilatie | 4d | 2016-11-29 | 2016-12-02 | 619 |  | 53025 | "3 UITVOERINGSTIJDSCHEMA-BLOKKEN.Blok 12 C12 tm C15" |
| 621 | 2440.4266.4271.5430 | Afmontage mechanische ventilatie | 2d | 2016-12-05 | 2016-12-06 | 620 |  | 53035 | "3 UITVOERINGSTIJDSCHEMA-BLOKKEN.Blok 13 C16 en C17" |
| 622 | 2440.4266.4271.5431 | Afmontage mechanische ventilatie | 2d | 2016-12-08 | 2016-12-09 | 621 |  | 53045 | "3 UITVOERINGSTIJDSCHEMA-BLOKKEN.Blok 14 C18 en C19" |
| 623 | 2440.4266.4271.5432 | Afmontage mechanische ventilatie | 2d | 2016-12-12 | 2016-12-13 | 622 |  | 53055 | "3 UITVOERINGSTIJDSCHEMA-BLOKKEN.Blok 15 C20 en C21" |
| 624 | 2440.4266.4271.5433 | Afmontage mechanische ventilatie | 8d | 2016-12-15 | 2017-01-10 | 623 |  | 53065 | "3 UITVOERINGSTIJDSCHEMA-BLOKKEN.Blok 16 C22 tm C29" |
| 625 | 2440.4266.4271.5434 | Afmontage sanitair | 7d | 2016-11-15 | 2016-11-23 |  | start no earlier than 2016-11-15 | 53075 | "3 UITVOERINGSTIJDSCHEMA-BLOKKEN.Blok 10 C01 tm C07" |
| 626 | 2440.4266.4271.5435 | Afmontage sanitair | 4d | 2016-11-24 | 2016-11-29 | 625 |  | 53085 | "3 UITVOERINGSTIJDSCHEMA-BLOKKEN.Blok 11 C08 tm C11" |
| 627 | 2440.4266.4271.5436 | Afmontage sanitair | 4d | 2016-11-30 | 2016-12-05 | 626 |  | 53095 | "3 UITVOERINGSTIJDSCHEMA-BLOKKEN.Blok 12 C12 tm C15" |
| 628 | 2440.4266.4271.5437 | Afmontage sanitair | 2d | 2016-12-06 | 2016-12-08 | 627 |  | 53105 | "3 UITVOERINGSTIJDSCHEMA-BLOKKEN.Blok 13 C16 en C17" |
| 629 | 2440.4266.4271.5438 | Afmontage sanitair | 2d | 2016-12-09 | 2016-12-12 | 628 |  | 53115 | "3 UITVOERINGSTIJDSCHEMA-BLOKKEN.Blok 14 C18 en C19" |
| 630 | 2440.4266.4271.5439 | Afmontage sanitair | 2d | 2016-12-13 | 2016-12-15 | 629 |  | 53125 | "3 UITVOERINGSTIJDSCHEMA-BLOKKEN.Blok 15 C20 en C21" |
| 631 | 2440.4266.4271.5440 | Afmontage sanitair | 8d | 2016-12-16 | 2017-01-12 | 630 |  | 53135 | "3 UITVOERINGSTIJDSCHEMA-BLOKKEN.Blok 16 C22 tm C29" |
| 632 | 2440.4266.4271.5441 | Afmontage electra | 7d | 2016-11-16 | 2016-11-24 |  | start no earlier than 2016-11-16 | 53145 | "3 UITVOERINGSTIJDSCHEMA-BLOKKEN.Blok 10 C01 tm C07" |
| 633 | 2440.4266.4271.5442 | Afmontage electra | 4d | 2016-11-25 | 2016-11-30 | 632 |  | 53155 | "3 UITVOERINGSTIJDSCHEMA-BLOKKEN.Blok 11 C08 tm C11" |
| 634 | 2440.4266.4271.5443 | Afmontage electra | 4d | 2016-12-01 | 2016-12-06 | 633 |  | 53165 | "3 UITVOERINGSTIJDSCHEMA-BLOKKEN.Blok 12 C12 tm C15" |
| 635 | 2440.4266.4271.5444 | Afmontage electra | 2d | 2016-12-08 | 2016-12-09 | 634 |  | 53175 | "3 UITVOERINGSTIJDSCHEMA-BLOKKEN.Blok 13 C16 en C17" |
| 636 | 2440.4266.4271.5445 | Afmontage electra | 2d | 2016-12-12 | 2016-12-13 | 635 |  | 53185 | "3 UITVOERINGSTIJDSCHEMA-BLOKKEN.Blok 14 C18 en C19" |
| 637 | 2440.4266.4271.5446 | Afmontage electra | 2d | 2016-12-15 | 2016-12-16 | 636 |  | 53195 | "3 UITVOERINGSTIJDSCHEMA-BLOKKEN.Blok 15 C20 en C21" |

| ID | WBS | Task | Duration | Start | Finish | Predecessors | Constraint | Unique_Task_ID | CodeLibrary:"Legenda" |
| --- | --- | --- | --- | --- | --- | --- | --- | --- | --- |
| 638 | 2440.4266.4271.5447 | Afmontage electra | 8d | 2016-12-19 | 2017-01-13 | 637 |  | 53205 | "3 UITVOERINGSTIJDSCHEMA-BLOKKEN.Blok 16 C22 tm C29" |
| 639 | 2440.4266.4271.5448 | CV- ketels monteren | 7d | 2016-11-17 | 2016-11-25 |  | start no earlier than 2016-11-17 | 53215 | "3 UITVOERINGSTIJDSCHEMA-BLOKKEN.Blok 10 C01 tm C07" |
| 640 | 2440.4266.4271.5449 | CV- ketels monteren | 4d | 2016-11-28 | 2016-12-01 | 639 |  | 53225 | "3 UITVOERINGSTIJDSCHEMA-BLOKKEN.Blok 11 C08 tm C11" |
| 641 | 2440.4266.4271.5450 | CV- ketels monteren | 4d | 2016-12-02 | 2016-12-08 | 640 |  | 53235 | "3 UITVOERINGSTIJDSCHEMA-BLOKKEN.Blok 12 C12 tm C15" |
| 642 | 2440.4266.4271.5451 | CV- ketels monteren | 2d | 2016-12-09 | 2016-12-12 | 641 |  | 53245 | "3 UITVOERINGSTIJDSCHEMA-BLOKKEN.Blok 13 C16 en C17" |
| 643 | 2440.4266.4271.5452 | CV- ketels monteren | 2d | 2016-12-13 | 2016-12-15 | 642 |  | 53255 | "3 UITVOERINGSTIJDSCHEMA-BLOKKEN.Blok 14 C18 en C19" |
| 644 | 2440.4266.4271.5453 | CV- ketels monteren | 2d | 2016-12-16 | 2016-12-19 | 643 |  | 53265 | "3 UITVOERINGSTIJDSCHEMA-BLOKKEN.Blok 15 C20 en C21" |
| 645 | 2440.4266.4271.5454 | CV- ketels monteren | 8d | 2016-12-20 | 2017-01-16 | 644 |  | 53275 | "3 UITVOERINGSTIJDSCHEMA-BLOKKEN.Blok 16 C22 tm C29" |
| 646 | 2440.4266.4271.5455 | Kitwerk aanbrengen | 7d | 2016-11-18 | 2016-11-28 |  | start no earlier than 2016-11-18 | 53285 | "3 UITVOERINGSTIJDSCHEMA-BLOKKEN.Blok 10 C01 tm C07" |
| 647 | 2440.4266.4271.5456 | Kitwerk aanbrengen | 4d | 2016-11-29 | 2016-12-02 | 646 |  | 53295 | "3 UITVOERINGSTIJDSCHEMA-BLOKKEN.Blok 11 C08 tm C11" |
| 648 | 2440.4266.4271.5457 | Kitwerk aanbrengen | 4d | 2016-12-05 | 2016-12-09 | 647 |  | 53305 | "3 UITVOERINGSTIJDSCHEMA-BLOKKEN.Blok 12 C12 tm C15" |
| 649 | 2440.4266.4271.5458 | Kitwerk aanbrengen | 2d | 2016-12-12 | 2016-12-13 | 648 |  | 53315 | "3 UITVOERINGSTIJDSCHEMA-BLOKKEN.Blok 13 C16 en C17" |
| 650 | 2440.4266.4271.5459 | Kitwerk aanbrengen | 2d | 2016-12-15 | 2016-12-16 | 649 |  | 53325 | "3 UITVOERINGSTIJDSCHEMA-BLOKKEN.Blok 14 C18 en C19" |
| 651 | 2440.4266.4271.5460 | Kitwerk aanbrengen | 2d | 2016-12-19 | 2016-12-20 | 650 |  | 53335 | "3 UITVOERINGSTIJDSCHEMA-BLOKKEN.Blok 15 C20 en C21" |
| 652 | 2440.4266.4271.5461 | Kitwerk aanbrengen | 8d | 2016-12-22 | 2017-01-17 | 651 |  | 53345 | "3 UITVOERINGSTIJDSCHEMA-BLOKKEN.Blok 16 C22 tm C29" |
| 653 | 2440.4266.4271.5462 | Schilderwerk binnen | 7d | 2016-11-18 | 2016-11-28 |  | start no earlier than 2016-11-18 | 53355 | "3 UITVOERINGSTIJDSCHEMA-BLOKKEN.Blok 10 C01 tm C07" |
| 654 | 2440.4266.4271.5463 | Schilderwerk binnen | 4d | 2016-11-29 | 2016-12-02 | 653 |  | 53365 | "3 UITVOERINGSTIJDSCHEMA-BLOKKEN.Blok 11 C08 tm C11" |
| 655 | 2440.4266.4271.5464 | Schilderwerk binnen | 4d | 2016-12-05 | 2016-12-09 | 654 |  | 53375 | "3 UITVOERINGSTIJDSCHEMA-BLOKKEN.Blok 12 C12 tm C15" |
| 656 | 2440.4266.4271.5465 | Schilderwerk binnen | 2d | 2016-12-12 | 2016-12-13 | 655 |  | 53385 | "3 UITVOERINGSTIJDSCHEMA-BLOKKEN.Blok 13 C16 en C17" |
| 657 | 2440.4266.4271.5466 | Schilderwerk binnen | 2d | 2016-12-15 | 2016-12-16 | 656 |  | 53395 | "3 UITVOERINGSTIJDSCHEMA-BLOKKEN.Blok 14 C18 en C19" |
| 658 | 2440.4266.4271.5467 | Schilderwerk binnen | 2d | 2016-12-19 | 2016-12-20 | 657 |  | 53405 | "3 UITVOERINGSTIJDSCHEMA-BLOKKEN.Blok 15 C20 en C21" |
| 659 | 2440.4266.4271.5468 | Schilderwerk binnen | 8d | 2016-12-22 | 2017-01-17 | 658 |  | 53415 | "3 UITVOERINGSTIJDSCHEMA-BLOKKEN.Blok 16 C22 tm C29" |
| 660 | 2440.4266.4271.5469 | Binnendeuren hangen | 7d | 2016-11-21 | 2016-11-29 |  | start no earlier than 2016-11-21 | 53425 | "3 UITVOERINGSTIJDSCHEMA-BLOKKEN.Blok 10 C01 tm C07" |
| 661 | 2440.4266.4271.5470 | Binnendeuren hangen | 4d | 2016-11-30 | 2016-12-05 | 660 |  | 53435 | "3 UITVOERINGSTIJDSCHEMA-BLOKKEN.Blok 11 C08 tm C11" |
| 662 | 2440.4266.4271.5471 | Binnendeuren hangen | 4d | 2016-12-06 | 2016-12-12 | 661 |  | 53445 | "3 UITVOERINGSTIJDSCHEMA-BLOKKEN.Blok 12 C12 tm C15" |
| 663 | 2440.4266.4271.5472 | Binnendeuren hangen | 2d | 2016-12-13 | 2016-12-15 | 662 |  | 53455 | "3 UITVOERINGSTIJDSCHEMA-BLOKKEN.Blok 13 C16 en C17" |
| 664 | 2440.4266.4271.5473 | Binnendeuren hangen | 2d | 2016-12-16 | 2016-12-19 | 663 |  | 53465 | "3 UITVOERINGSTIJDSCHEMA-BLOKKEN.Blok 14 C18 en C19" |
| 665 | 2440.4266.4271.5474 | Binnendeuren hangen | 2d | 2016-12-20 | 2016-12-22 | 664 |  | 53475 | "3 UITVOERINGSTIJDSCHEMA-BLOKKEN.Blok 15 C20 en C21" |
| 666 | 2440.4266.4271.5475 | Binnendeuren hangen | 8d | 2016-12-23 | 2017-01-20 | 665 |  | 53485 | "3 UITVOERINGSTIJDSCHEMA-BLOKKEN.Blok 16 C22 tm C29" |
| 667 | 2440.4266.4271.5476 | Afmontage bouwkundig | 7d | 2016-11-22 | 2016-11-30 |  | start no earlier than 2016-11-22 | 53495 | "3 UITVOERINGSTIJDSCHEMA-BLOKKEN.Blok 10 C01 tm C07" |
| 668 | 2440.4266.4271.5477 | Afmontage bouwkundig | 4d | 2016-12-01 | 2016-12-06 | 667 |  | 53505 | "3 UITVOERINGSTIJDSCHEMA-BLOKKEN.Blok 11 C08 tm C11" |
| 669 | 2440.4266.4271.5478 | Afmontage bouwkundig | 4d | 2016-12-08 | 2016-12-13 | 668 |  | 53515 | "3 UITVOERINGSTIJDSCHEMA-BLOKKEN.Blok 12 C12 tm C15" |
| 670 | 2440.4266.4271.5479 | Afmontage bouwkundig | 2d | 2016-12-15 | 2016-12-16 | 669 |  | 53525 | "3 UITVOERINGSTIJDSCHEMA-BLOKKEN.Blok 13 C16 en C17" |
| 671 | 2440.4266.4271.5480 | Afmontage bouwkundig | 2d | 2016-12-19 | 2016-12-20 | 670 |  | 53535 | "3 UITVOERINGSTIJDSCHEMA-BLOKKEN.Blok 14 C18 en C19" |
| 672 | 2440.4266.4271.5481 | Afmontage bouwkundig | 2d | 2016-12-22 | 2016-12-23 | 671 |  | 53545 | "3 UITVOERINGSTIJDSCHEMA-BLOKKEN.Blok 15 C20 en C21" |
| 673 | 2440.4266.4271.5482 | Afmontage bouwkundig | 8d | 2017-01-09 | 2017-01-23 | 672 |  | 53555 | "3 UITVOERINGSTIJDSCHEMA-BLOKKEN.Blok 16 C22 tm C29" |
| 674 | 2440.4266.4271.5483 | Voordeuren hangen | 7d | 2016-11-22 | 2016-11-30 |  | start no earlier than 2016-11-22 | 53565 | "3 UITVOERINGSTIJDSCHEMA-BLOKKEN.Blok 10 C01 tm C07" |
| 675 | 2440.4266.4271.5484 | Voordeuren hangen | 4d | 2016-12-01 | 2016-12-06 | 674 |  | 53575 | "3 UITVOERINGSTIJDSCHEMA-BLOKKEN.Blok 11 C08 tm C11" |
| 676 | 2440.4266.4271.5485 | Voordeuren hangen | 4d | 2016-12-08 | 2016-12-13 | 675 |  | 53585 | "3 UITVOERINGSTIJDSCHEMA-BLOKKEN.Blok 12 C12 tm C15" |
| 677 | 2440.4266.4271.5486 | Voordeuren hangen | 2d | 2016-12-15 | 2016-12-16 | 676 |  | 53595 | "3 UITVOERINGSTIJDSCHEMA-BLOKKEN.Blok 13 C16 en C17" |
| 678 | 2440.4266.4271.5487 | Voordeuren hangen | 2d | 2016-12-19 | 2016-12-20 | 677 |  | 53605 | "3 UITVOERINGSTIJDSCHEMA-BLOKKEN.Blok 14 C18 en C19" |
| 679 | 2440.4266.4271.5488 | Voordeuren hangen | 2d | 2016-12-22 | 2016-12-23 | 678 |  | 53615 | "3 UITVOERINGSTIJDSCHEMA-BLOKKEN.Blok 15 C20 en C21" |
| 680 | 2440.4266.4271.5489 | Voordeuren hangen | 8d | 2017-01-09 | 2017-01-23 | 679 |  | 53625 | "3 UITVOERINGSTIJDSCHEMA-BLOKKEN.Blok 16 C22 tm C29" |

| ID | WBS | Task | Duration | Start | Finish | Predecessors | Constraint | Unique_Task_ID | CodeLibrary:"Legenda" |
| --- | --- | --- | --- | --- | --- | --- | --- | --- | --- |
| 682 | 2440.4266.4272 | **Algemeen** | 304h | 2016-11-09 | 2017-01-23 |  | start no earlier than 2016-11-09 | 35075 | "3 UITVOERINGSTIJDSCHEMA-BLOKKEN.Blok 10 C01 tm C07" |
| 683 | 2440.4266.4272.5138 | Houten bergingen plaatsen | 7d | 2016-11-09 | 2016-11-17 |  | start no earlier than 2016-11-09 | 35085 | "3 UITVOERINGSTIJDSCHEMA-BLOKKEN.Blok 10 C01 tm C07" |
| 684 | 2440.4266.4272.5139 | Houten bergingen plaatsen | 4d | 2016-11-18 | 2016-11-23 | 683 |  | 44905 | "3 UITVOERINGSTIJDSCHEMA-BLOKKEN.Blok 11 C08 tm C11" |
| 685 | 2440.4266.4272.5140 | Houten bergingen plaatsen | 4d | 2016-11-24 | 2016-11-29 | 684 |  | 44915 | "3 UITVOERINGSTIJDSCHEMA-BLOKKEN.Blok 12 C12 tm C15" |
| 686 | 2440.4266.4272.5141 | Houten bergingen plaatsen | 8d | 2016-11-30 | 2016-12-12 | 685 |  | 44925 | "3 UITVOERINGSTIJDSCHEMA-BLOKKEN.Blok 16 C22 tm C29" |
| 687 | 2440.4266.4272.5145 | Hekwerken en hagen plaatsen | 7d | 2016-11-22 | 2016-11-30 |  | start no earlier than 2016-11-22 | 44985 | "3 UITVOERINGSTIJDSCHEMA-BLOKKEN.Blok 10 C01 tm C07" |
| 688 | 2440.4266.4272.5146 | Hekwerken en hagen plaatsen | 4d | 2016-12-01 | 2016-12-06 | 687 |  | 44995 | "3 UITVOERINGSTIJDSCHEMA-BLOKKEN.Blok 11 C08 tm C11" |
| 689 | 2440.4266.4272.5147 | Hekwerken en hagen plaatsen | 4d | 2016-12-08 | 2016-12-13 | 688 |  | 45005 | "3 UITVOERINGSTIJDSCHEMA-BLOKKEN.Blok 12 C12 tm C15" |
| 690 | 2440.4266.4272.5148 | Hekwerken en hagen plaatsen | 8d | 2016-12-15 | 2017-01-10 | 689 |  | 45015 | "3 UITVOERINGSTIJDSCHEMA-BLOKKEN.Blok 16 C22 tm C29" |
| 691 | 2440.4266.4272.5149 | Hekwerken en hagen plaatsen | 2d | 2017-01-12 | 2017-01-13 | 690 |  | 45025 | "3 UITVOERINGSTIJDSCHEMA-BLOKKEN.Blok 13 C16 en C17" |
| 692 | 2440.4266.4272.5150 | Hekwerken en hagen plaatsen | 2d | 2017-01-16 | 2017-01-17 | 691 |  | 45035 | "3 UITVOERINGSTIJDSCHEMA-BLOKKEN.Blok 14 C18 en C19" |
| 693 | 2440.4266.4272.5151 | Hekwerken en hagen plaatsen | 2d | 2017-01-20 | 2017-01-23 | 692 |  | 45045 | "3 UITVOERINGSTIJDSCHEMA-BLOKKEN.Blok 15 C20 en C21" |
| 695 | 2440.4266.4273 | **OPLEVEREN** | 328h | 2016-12-01 | 2017-03-07 |  | start no earlier than 2016-12-01 | 33806 | "3 UITVOERINGSTIJDSCHEMA-BLOKKEN.Blok 10 C01 tm C07" |
| 696 | 2440.4266.4273.5152 | Napoetsen woningen | 7d | 2016-12-01 | 2016-12-12 |  | start no earlier than 2016-12-01 | 33845 | "3 UITVOERINGSTIJDSCHEMA-BLOKKEN.Blok 10 C01 tm C07" |
| 697 | 2440.4266.4273.5153 | Napoetsen woningen | 4d | 2016-12-13 | 2016-12-19 | 696 |  | 45185 | "3 UITVOERINGSTIJDSCHEMA-BLOKKEN.Blok 11 C08 tm C11" |
| 698 | 2440.4266.4273.5154 | Napoetsen woningen | 4d | 2016-12-20 | 2017-01-09 | 697 |  | 45195 | "3 UITVOERINGSTIJDSCHEMA-BLOKKEN.Blok 12 C12 tm C15" |
| 699 | 2440.4266.4273.5156 | Napoetsen woningen | 2d | 2017-01-10 | 2017-01-12 | 698 |  | 45215 | "3 UITVOERINGSTIJDSCHEMA-BLOKKEN.Blok 13 C16 en C17" |
| 700 | 2440.4266.4273.5157 | Napoetsen woningen | 2d | 2017-01-13 | 2017-01-16 | 699 |  | 45225 | "3 UITVOERINGSTIJDSCHEMA-BLOKKEN.Blok 14 C18 en C19" |
| 701 | 2440.4266.4273.5158 | Napoetsen woningen | 2d | 2017-01-17 | 2017-01-20 | 700 |  | 45235 | "3 UITVOERINGSTIJDSCHEMA-BLOKKEN.Blok 15 C20 en C21" |
| 702 | 2440.4266.4273.5216 | Napoetsen woningen | 8d | 2017-01-23 | 2017-02-07 | 701 |  | 51145 | "3 UITVOERINGSTIJDSCHEMA-BLOKKEN.Blok 16 C22 tm C29" |
| 703 | 2440.4266.4273.5159 | Vooropname intern | 7d | 2016-12-02 | 2016-12-13 |  | start no earlier than 2016-12-02 | 33816 | "3 UITVOERINGSTIJDSCHEMA-BLOKKEN.Blok 10 C01 tm C07" |
| 704 | 2440.4266.4273.5160 | Vooropname intern | 4d | 2016-12-15 | 2016-12-20 | 703 |  | 45275 | "3 UITVOERINGSTIJDSCHEMA-BLOKKEN.Blok 11 C08 tm C11" |
| 705 | 2440.4266.4273.5161 | Vooropname intern | 4d | 2016-12-22 | 2017-01-10 | 704 |  | 45285 | "3 UITVOERINGSTIJDSCHEMA-BLOKKEN.Blok 12 C12 tm C15" |
| 706 | 2440.4266.4273.5163 | Vooropname intern | 2d | 2017-01-12 | 2017-01-13 | 705 |  | 45305 | "3 UITVOERINGSTIJDSCHEMA-BLOKKEN.Blok 13 C16 en C17" |
| 707 | 2440.4266.4273.5164 | Vooropname intern | 2d | 2017-01-16 | 2017-01-17 | 706 |  | 45315 | "3 UITVOERINGSTIJDSCHEMA-BLOKKEN.Blok 14 C18 en C19" |
| 708 | 2440.4266.4273.5165 | Vooropname intern | 2d | 2017-01-20 | 2017-01-23 | 707 |  | 45325 | "3 UITVOERINGSTIJDSCHEMA-BLOKKEN.Blok 15 C20 en C21" |
| 709 | 2440.4266.4273.5217 | Vooropname intern | 8d | 2017-01-24 | 2017-02-10 | 708 |  | 51155 | "3 UITVOERINGSTIJDSCHEMA-BLOKKEN.Blok 16 C22 tm C29" |
| 710 | 2440.4266.4273.5166 | Narooien vooropname | 7d | 2016-12-05 | 2016-12-15 |  | start no earlier than 2016-12-05 | 33885 | "3 UITVOERINGSTIJDSCHEMA-BLOKKEN.Blok 10 C01 tm C07" |
| 711 | 2440.4266.4273.5167 | Narooien vooropname | 4d | 2016-12-16 | 2016-12-22 | 710 |  | 45355 | "3 UITVOERINGSTIJDSCHEMA-BLOKKEN.Blok 11 C08 tm C11" |
| 712 | 2440.4266.4273.5168 | Narooien vooropname | 4d | 2016-12-23 | 2017-01-12 | 711 |  | 45365 | "3 UITVOERINGSTIJDSCHEMA-BLOKKEN.Blok 12 C12 tm C15" |
| 713 | 2440.4266.4273.5170 | Narooien vooropname | 2d | 2017-01-13 | 2017-01-16 | 712 |  | 45385 | "3 UITVOERINGSTIJDSCHEMA-BLOKKEN.Blok 13 C16 en C17" |
| 714 | 2440.4266.4273.5171 | Narooien vooropname | 2d | 2017-01-17 | 2017-01-20 | 713 |  | 45395 | "3 UITVOERINGSTIJDSCHEMA-BLOKKEN.Blok 14 C18 en C19" |
| 715 | 2440.4266.4273.5172 | Narooien vooropname | 2d | 2017-01-23 | 2017-01-24 | 714 |  | 45405 | "3 UITVOERINGSTIJDSCHEMA-BLOKKEN.Blok 15 C20 en C21" |
| 716 | 2440.4266.4273.5218 | Narooien vooropname | 8d | 2017-01-27 | 2017-02-17 | 715 |  | 51165 | "3 UITVOERINGSTIJDSCHEMA-BLOKKEN.Blok 16 C22 tm C29" |
| 717 | 2440.4266.4273.5173 | Voorschouw door kopers | 7d | 2016-12-09 | 2016-12-20 |  | start no earlier than 2016-12-09 | 45525 | "3 UITVOERINGSTIJDSCHEMA-BLOKKEN.Blok 10 C01 tm C07" |
| 718 | 2440.4266.4273.5174 | Voorschouw door kopers | 4d | 2016-12-22 | 2017-01-10 | 717 |  | 45535 | "3 UITVOERINGSTIJDSCHEMA-BLOKKEN.Blok 11 C08 tm C11" |
| 719 | 2440.4266.4273.5175 | Voorschouw door kopers | 4d | 2017-01-12 | 2017-01-17 | 718 |  | 45545 | "3 UITVOERINGSTIJDSCHEMA-BLOKKEN.Blok 12 C12 tm C15" |
| 720 | 2440.4266.4273.5177 | Voorschouw door kopers | 2d | 2017-01-20 | 2017-01-23 | 719 |  | 45565 | "3 UITVOERINGSTIJDSCHEMA-BLOKKEN.Blok 13 C16 en C17" |
| 721 | 2440.4266.4273.5178 | Voorschouw door kopers | 2d | 2017-01-24 | 2017-01-27 | 720 |  | 45575 | "3 UITVOERINGSTIJDSCHEMA-BLOKKEN.Blok 14 C18 en C19" |
| 722 | 2440.4266.4273.5179 | Voorschouw door kopers | 2d | 2017-01-30 | 2017-01-31 | 721 |  | 45585 | "3 UITVOERINGSTIJDSCHEMA-BLOKKEN.Blok 15 C20 en C21" |
| 723 | 2440.4266.4273.5219 | Voorschouw door kopers | 8d | 2017-02-03 | 2017-02-23 | 722 |  | 51175 | "3 UITVOERINGSTIJDSCHEMA-BLOKKEN.Blok 16 C22 tm C29" |
| 724 | 2440.4266.4273.5180 | Narooien na voorschouw | 7d | 2016-12-12 | 2016-12-22 |  | start no earlier than 2016-12-12 | 45615 | "3 UITVOERINGSTIJDSCHEMA-BLOKKEN.Blok 10 C01 tm C07" |
| 725 | 2440.4266.4273.5181 | Narooien na voorschouw | 4d | 2016-12-23 | 2017-01-12 | 724 |  | 45625 | "3 UITVOERINGSTIJDSCHEMA-BLOKKEN.Blok 11 C08 tm C11" |
| 726 | 2440.4266.4273.5182 | Narooien na voorschouw | 4d | 2017-01-13 | 2017-01-20 | 725 |  | 45635 | "3 UITVOERINGSTIJDSCHEMA-BLOKKEN.Blok 12 C12 tm C15" |
| 727 | 2440.4266.4273.5184 | Narooien na voorschouw | 2d | 2017-01-23 | 2017-01-24 | 726 |  | 45655 | "3 UITVOERINGSTIJDSCHEMA-BLOKKEN.Blok 13 C16 en C17" |
| 728 | 2440.4266.4273.5185 | Narooien na voorschouw | 2d | 2017-01-27 | 2017-01-30 | 727 |  | 45665 | "3 UITVOERINGSTIJDSCHEMA-BLOKKEN.Blok 14 C18 en C19" |
| 729 | 2440.4266.4273.5186 | Narooien na voorschouw | 2d | 2017-01-31 | 2017-02-03 | 728 |  | 45675 | "3 UITVOERINGSTIJDSCHEMA-BLOKKEN.Blok 15 C20 en C21" |
| 730 | 2440.4266.4273.5220 | Narooien na voorschouw | 8d | 2017-02-06 | 2017-02-24 | 729 |  | 51185 | "3 UITVOERINGSTIJDSCHEMA-BLOKKEN.Blok 16 C22 tm C29" |
| 731 | 2440.4266.4273.5187 | Opleveren | 7d | 2016-12-22 | 2017-01-16 |  | start no earlier than 2016-12-22 | 45705 | "3 UITVOERINGSTIJDSCHEMA-BLOKKEN.Blok 10 C01 tm C07" |
| 732 | 2440.4266.4273.5188 | Opleveren | 4d | 2017-01-17 | 2017-01-24 | 731 |  | 45715 | "3 UITVOERINGSTIJDSCHEMA-BLOKKEN.Blok 11 C08 tm C11" |
| 733 | 2440.4266.4273.5189 | Opleveren | 4d | 2017-01-27 | 2017-02-03 | 732 |  | 45725 | "3 UITVOERINGSTIJDSCHEMA-BLOKKEN.Blok 12 C12 tm C15" |
| 734 | 2440.4266.4273.5191 | Opleveren | 2d | 2017-02-06 | 2017-02-07 | 733 |  | 45745 | "3 UITVOERINGSTIJDSCHEMA-BLOKKEN.Blok 13 C16 en C17" |
| 735 | 2440.4266.4273.5192 | Opleveren | 2d | 2017-02-10 | 2017-02-17 | 734 |  | 45755 | "3 UITVOERINGSTIJDSCHEMA-BLOKKEN.Blok 14 C18 en C19" |
| 736 | 2440.4266.4273.5193 | Opleveren | 2d | 2017-02-20 | 2017-02-21 | 735 |  | 45765 | "3 UITVOERINGSTIJDSCHEMA-BLOKKEN.Blok 15 C20 en C21" |
| 737 | 2440.4266.4273.5221 | Opleveren | 8d | 2017-02-23 | 2017-03-07 | 736 |  | 51195 | "3 UITVOERINGSTIJDSCHEMA-BLOKKEN.Blok 16 C22 tm C29" |
